# PRD2017G09-软件工程系列课程教学辅助网站-项目计划甘特图V1.5

How a schedule from MS Project changed from version to version. A marks actual dates.

## Version 1 (data date 2017-10-28, saved 2017-11-20)

Note of the change: 【奕吉】第七周界面原型PPT和历史文档更新和会议记录文档

| ID | WBS | Task | Duration | Start | Finish | Predecessors | Complete |
| --- | --- | --- | --- | --- | --- | --- | --- |
| 1 | 1 | **软件工程系列课程教学辅助网站** | 154d | 2017-09-28 20:00 A | 2018-01-16 21:00 |  | 39% |
| 2 | 1.1 | **项目前期准备** | 6h | 2017-09-28 20:00 A | 2017-10-04 21:00 |  | 100% |
| 3 | 1.1.1 | **项目范围选定** | 1h | 2017-09-28 20:00 A | 2017-09-28 21:00 A |  | 100% |
| 4 |  | 类似项目案例分析 | 1h | 2017-09-28 20:00 A | 2017-09-28 21:00 A |  | 100% |
| 5 |  | 小组第一周会议（讨论项目选题和后期分配资源） | 1h | 2017-09-28 20:00 A | 2017-09-28 21:00 A | 4 | 100% |
| 6 |  | 获取项目开发硬件资源 | 5h | 2017-09-29 20:00 A | 2017-10-03 21:00 A | 3 | 100% |
| 7 |  | logo设计 | 4h | 2017-09-29 20:00 A | 2017-09-30 21:00 A | 3 | 100% |
| 8 |  | 项目选定和开发软硬件的获得 | 0d | 2017-10-03 20:00 A | 2017-10-03 20:00 A | 6 | 100% |
| 9 |  | 小组第二周第一次会议记录 | 1h | 2017-10-09 17:00 A | 2017-10-09 18:00 A |  | 100% |
| 10 |  | 小组第二周第二次会议记录 | 1h | 2017-10-13 20:00 A | 2017-10-13 21:00 A |  | 100% |
| 11 | 1.4 | **项目计划** | 32d | 2017-10-10 20:00 | 2017-10-29 21:00 | 8 | 97% |
| 12 |  | 甘特图绘制V0.1 | 4h | 2017-10-09 20:00 A | 2017-10-12 21:00 A | 2 | 100% |
| 13 |  | WBS绘制 | 2h | 2017-10-13 20:00 A | 2017-10-14 19:00 A | 12 | 100% |
| 14 |  | OBS绘制 | 2h | 2017-10-14 19:00 A | 2017-10-14 21:00 A | 13 | 100% |
| 15 |  | 风险管理 | 2h | 2017-10-13 20:00 A | 2017-10-14 19:00 A | 12 | 100% |
| 16 |  | 版本控制系统配置 | 3h | 2017-10-11 20:00 A | 2017-10-13 21:00 A | 12 | 100% |
| 17 |  | 项目计划V0.1 | 0d | 2017-10-15 20:00 A | 2017-10-15 20:00 A | 2 | 100% |
| 18 |  | 甘特图完善V0.2 | 3h | 2017-10-17 20:00 A | 2017-10-19 21:00 A | 17 | 100% |
| 19 |  | 项目计划完善V0.2 | 0h | 2017-10-20 20:00 A | 2017-10-20 20:00 A | 18 | 100% |
| 20 |  | 小组第三周第一次会议 | 1d | 2017-10-20 12:00 A | 2017-10-20 13:00 A |  | 100% |
| 21 |  | 小组第三周第二次会议 | 1d | 2017-10-20 20:00 A | 2017-10-20 21:00 A |  | 100% |
| 22 |  | 小组第四周第一次会议 | 1d | 2017-10-23 17:00 A | 2017-10-23 18:00 A |  | 100% |
| 23 |  | 质量保证计划 | 1h | 2017-10-23 20:00 A | 2017-10-23 21:00 A | 19 | 100% |
| 24 |  | 人力资源配置 | 1h | 2017-10-23 20:00 A | 2017-10-23 21:00 A | 19 | 100% |
| 25 |  | 成本预算 | 1h | 2017-10-26 20:00 A | 2017-10-26 21:00 A | 23 | 100% |
| 26 |  | 甘特图完善V1.0 | 3h | 2017-10-27 20:00 A | 2017-10-28 20:00 A | 25 | 100% |
| 27 |  | WBS、OBS修改 | 4h | 2017-10-28 20:00 A | 2017-10-29 21:00 | 26 | 75% |
| 28 |  | 项目计划完善V1.0 | 0h | 2017-10-28 20:00 A | 2017-10-28 20:00 A | 26 | 100% |
| 29 |  | 小组第四周第二次会议 | 1h | 2017-10-27 19:30 A | 2017-10-27 20:30 A |  | 100% |
| 30 |  | 项目章程 | 0h | 2017-10-27 20:00 A | 2017-10-27 20:00 A | 28 | 100% |
| 31 |  | 项目启动 | 0d | 2017-10-27 20:00 | 2017-10-27 20:00 | 30 |  |
| 32 |  | 需求工程计划-初步 | 0h | 2017-10-26 20:00 A | 2017-10-26 20:00 A | 31 | 100% |
| 33 |  | QA计划初步 | 0h | 2017-10-28 20:00 A | 2017-10-28 20:00 A | 23 | 100% |
| 34 | 1.7 | **需求工程** | 90d | 2017-10-29 20:00 | 2017-12-25 21:00 | 32 | 26% |
| 35 |  | 小组第五周第一次会议 | 1h | 2017-10-30 17:00 A | 2017-10-30 18:00 A |  | 100% |
| 36 | 1.7.2 | **需求获取活动** | 46d | 2017-10-29 20:00 | 2017-11-27 21:00 |  | 71% |
| 37 | 1.7.2.1 | **建立业务需求** | 8h | 2017-10-30 20:00 | 2017-11-04 21:00 |  | 33% |
| 38 | 1.7.2.1.1 | **定义产品愿景和项目范围** | 5h | 2017-10-30 20:00 | 2017-11-03 21:00 |  |  |
| 39 |  | 建立业务目标模型 | 1h | 2017-10-30 20:00 | 2017-10-30 21:00 | 35 |  |
| 40 |  | 干系人评审模型 | 1h | 2017-11-02 20:00 | 2017-11-02 21:00 | 39 |  |
| 41 |  | 项目愿景与范围文档 | 0d | 2017-10-28 20:00 | 2017-10-28 20:00 | 33 |  |
| 42 |  | 解决业务需求冲突 | 1h | 2017-11-04 20:00 A | 2017-11-04 21:00 A | 40 | 100% |
| 43 | 1.7.2.2 | **识别用户群** | 2h | 2017-10-31 20:00 | 2017-11-01 21:00 A | 41 | 100% |
| 44 |  | 选择产品代言人，记录产品代言人的期望 | 1h | 2017-10-28 20:00 A | 2017-10-28 21:00 A | 33 | 100% |
| 45 |  | 用户分类 | 1h | 2017-10-31 20:00 A | 2017-10-31 21:00 A | 39 | 100% |
| 46 |  | 识别用户类别 | 1h | 2017-11-01 20:00 A | 2017-11-01 21:00 A | 45 | 100% |
| 47 |  | 举行引导式需求获取讨论会 | 1d | 2017-11-02 20:00 A | 2017-11-02 21:00 A | 46 | 100% |
| 48 |  | QA计划 | 0h | 2017-11-02 20:00 A | 2017-11-02 20:00 A | 46 | 100% |
| 49 |  | 小组第五周第二次会议 | 0h | 2017-11-03 20:00 A | 2017-11-03 21:00 A | 47 | 100% |
| 50 |  | 相关文档修改 | 1d | 2017-11-05 20:00 A | 2017-11-05 21:00 A |  | 100% |
| 51 |  | 组织焦点小组 | 1h | 2017-11-04 18:00 A | 2017-11-04 19:00 A | 49 | 100% |
| 52 |  | 识别用户需求 | 1d | 2017-11-04 18:00 A | 2017-11-04 19:00 A | 49 | 100% |
| 53 |  | 识别系统事件和响应 | 3h | 2017-11-04 18:00 A | 2017-11-04 21:00 A | 49 | 100% |
| 54 |  | 观察用户如何完成工作 | 4d | 2017-11-04 18:00 A | 2017-11-05 19:00 A | 49 | 100% |
| 55 |  | 分发问卷调查 | 1d | 2017-11-04 18:00 A | 2017-11-04 19:00 A | 49 | 100% |
| 56 |  | 举办需求获取访谈 | 3h | 2017-11-05 18:00 A | 2017-11-05 21:00 A | 53 | 100% |
| 57 |  | 分析文档 | 1d | 2017-11-05 18:00 A | 2017-11-05 19:00 A | 55 | 100% |
| 58 |  | 检查问题报告 | 1h | 2017-11-07 20:00 | 2017-11-07 21:00 |  |  |
| 59 |  | 重用已有的需求 | 2d | 2017-11-07 20:00 | 2017-11-08 21:00 |  |  |
| 60 |  | 学生用户代表访谈 | 2h | 2017-11-18 20:00 | 2017-11-19 19:00 |  |  |
| 61 |  | 游客用户代表访谈 | 1h | 2017-11-18 20:00 | 2017-11-18 21:00 |  |  |
| 62 |  | 教师用户代表访谈 | 1h | 2017-11-27 20:00 A | 2017-11-27 21:00 A |  | 100% |
| 63 |  | 管理员用户代表访谈 | 1h | 2017-11-08 20:00 | 2017-11-08 21:00 |  |  |
| 64 | 1.7.3 | **需求分析** | 29d | 2017-10-31 20:00 A | 2017-11-18 21:00 | 36 | 45% |
| 65 | 1.7.3.1 | **应用环境建模（生态环境图）** | 11d | 2017-10-31 20:00 A | 2017-11-06 21:00 A |  | 100% |
| 66 |  | 绘制管理员用例图 | 2d | 2017-11-05 20:00 A | 2017-11-06 21:00 A |  | 100% |
| 67 |  | 绘制部分初步定义类图 | 2d | 2017-11-05 20:00 A | 2017-11-06 21:00 A |  | 100% |
| 68 |  | 绘制部分系统状态图、部署图 | 1d | 2017-11-04 20:00 A | 2017-11-04 21:00 A |  | 100% |
| 69 |  | 绘制部分初步定义顺序图、协作图 | 1d | 2017-11-05 20:00 A | 2017-11-05 21:00 A |  | 100% |
| 70 |  | 绘制部分初步定义用例图 | 1d | 2017-11-05 20:00 A | 2017-11-05 21:00 A |  | 100% |

| ID | WBS | Task | Duration | Start | Finish | Predecessors | Complete |
| --- | --- | --- | --- | --- | --- | --- | --- |
| 71 |  | 创建原形 | 5h | 2017-11-04 18:00 A | 2017-11-05 20:00 A | 49 | 100% |
| 72 |  | 分析可实现性 | 1d | 2017-11-05 20:00 | 2017-11-05 21:00 | 71 |  |
| 73 |  | 小组第六周第一次会议 | 1h | 2017-11-06 17:00 A | 2017-11-06 18:00 A |  | 100% |
| 74 |  | 需求工程计划-修改 | 1h | 2017-11-09 20:00 | 2017-11-09 21:00 | 63 |  |
| 75 |  | 小组第六周第二次会议 | 1h | 2017-11-10 20:00 A | 2017-11-10 21:00 A |  | 100% |
| 76 |  | 排列需求优先级 | 1d | 2017-11-11 20:00 | 2017-11-11 21:00 |  |  |
| 77 |  | 相关文档修改、绘制uml图 | 1d | 2017-11-12 20:00 | 2017-11-12 21:00 |  |  |
| 78 |  | 创建数据字典和ER图 | 4h | 2017-11-14 20:00 | 2017-11-17 21:00 |  |  |
| 79 |  | 小组第七周第一次会议 | 1h | 2017-11-13 17:00 | 2017-11-13 18:00 |  |  |
| 80 |  | 需求工程计划 | 0d | 2017-11-18 18:00 | 2017-11-18 18:00 | 74 |  |
| 81 | 1.7.3.12 | **需求建模** | 9d | 2017-11-11 20:00 | 2017-11-17 21:00 |  |  |
| 82 |  | 数据流图绘制 | 1h | 2017-11-12 20:00 | 2017-11-12 21:00 |  |  |
| 83 |  | 转态转移图 | 3h | 2017-11-11 20:00 | 2017-11-12 20:00 |  |  |
| 84 |  | 决策树 | 1h | 2017-11-12 20:00 | 2017-11-12 21:00 |  |  |
| 85 |  | 分析接口 | 1d | 2017-11-11 20:00 | 2017-11-11 21:00 |  |  |
| 86 |  | 将需求分配到子系统 | 2h | 2017-11-14 20:00 | 2017-11-15 21:00 |  |  |
| 87 | 1.7.4 | **规范说明** | 21h | 2017-11-16 20:00 | 2017-11-28 21:00 | 64 |  |
| 88 |  | 小组第七周第二次会议 | 1h | 2017-11-18 20:00 | 2017-11-18 21:00 |  |  |
| 89 |  | 采用需求文档模板 | 1d | 2017-11-18 20:00 | 2017-11-18 21:00 |  |  |
| 90 |  | 识别需求源头 | 1h | 2017-11-19 18:00 | 2017-11-19 19:00 | 89 |  |
| 91 |  | 为每个需求分配唯一标示 | 1h | 2017-11-19 19:00 | 2017-11-19 20:00 | 90 |  |
| 92 |  | 记录业务规则 | 1h | 2017-11-16 20:00 | 2017-11-16 21:00 |  |  |
| 93 |  | 描述非功能性需求 | 1h | 2017-11-19 20:00 | 2017-11-27 21:00 |  |  |
| 94 |  | 小组第八周第一次会议 | 1h | 2017-11-20 17:00 | 2017-11-20 18:00 |  |  |
| 95 |  | 小组第八周第二次会议 | 1h | 2017-11-24 20:00 | 2017-11-24 21:00 |  |  |
| 96 |  | 需求规格说明书--初步 | 0d | 2017-11-28 20:00 | 2017-11-28 20:00 | 93 |  |
| 97 | 1.7.5 | **需求验证** | 16d | 2017-11-27 20:00 | 2017-12-08 21:00 | 64 |  |
| 98 |  | 小组第九周第一次会议 | 1h | 2017-11-27 17:00 | 2017-11-27 18:00 |  |  |
| 99 |  | 评审需求 | 10h | 2017-11-28 20:00 | 2017-12-03 21:00 | 36 |  |
| 100 |  | 测试需求 | 10h | 2017-11-29 20:00 | 2017-12-04 21:00 | 36 |  |
| 101 |  | 定义验收条件 | 5h | 2017-11-30 20:00 | 2017-12-02 21:00 |  |  |
| 102 |  | 小组第九周第二次会议 | 0h | 2017-12-01 20:00 | 2017-12-01 21:00 |  |  |
| 103 |  | 模拟需求 | 7h | 2017-12-02 18:00 | 2017-12-04 21:00 | 101 |  |
| 104 |  | 小组第十周第一次会议 | 1h | 2017-12-04 17:00 | 2017-12-04 18:00 |  |  |
| 105 |  | 软件需求规格说书 | 0d | 2017-11-28 20:00 | 2017-11-28 20:00 | 96 |  |
| 106 |  | 小组第十周第二次会议 | 1h | 2017-12-08 20:00 | 2017-12-08 21:00 |  |  |
| 107 | 1.7.6 | **需求管理** | 28h | 2017-12-11 20:00 | 2017-12-30 21:00 | 97 |  |
| 108 |  | 小组第十一周第一次会议 | 1h | 2017-12-11 17:00 | 2017-12-11 18:00 |  |  |
| 109 |  | 建立变更控制流程 | 3h | 2017-12-12 20:00 | 2017-12-14 21:00 |  |  |
| 110 |  | 建立基线、管理需求版本 | 3h | 2017-12-18 20:00 | 2017-12-20 21:00 | 109FS+7h |  |
| 111 |  | 分析变更影响 | 3h | 2017-12-12 20:00 | 2017-12-14 21:00 |  |  |
| 112 |  | 小组第十一周第二次会议 | 1h | 2017-12-15 20:00 | 2017-12-15 21:00 |  |  |
| 113 |  | 维护变更历史 | 4h | 2017-12-18 20:00 | 2017-12-21 21:00 |  |  |
| 114 |  | 小组第十二周第一次会议 | 1h | 2017-12-17 17:00 | 2017-12-17 18:00 |  |  |
| 115 |  | 跟踪需求状态 | 5h | 2017-12-17 20:00 | 2017-12-21 21:00 |  |  |
| 116 |  | 跟踪需求问题 | 4h | 2017-12-18 20:00 | 2017-12-21 21:00 |  |  |
| 117 |  | 维护需求可跟踪矩阵 | 2h | 2017-12-19 20:00 | 2017-12-20 21:00 |  |  |
| 118 |  | 小组第十二周第二次会议 | 1h | 2017-12-22 20:00 | 2017-12-22 21:00 |  |  |
| 119 |  | 使用需求管理工具 | 4h | 2017-12-23 20:00 | 2017-12-24 21:00 |  |  |
| 120 |  | 软件需求变更文档 | 0d | 2017-12-25 20:00 | 2017-12-25 20:00 | 119 |  |
| 121 |  | 小组第十三周第一次会议 | 1h | 2017-12-25 17:00 | 2017-12-25 18:00 |  |  |
| 122 |  | 软件需求变更文档修改 | 1h | 2017-12-27 20:00 | 2017-12-27 21:00 | 105FS+45h |  |
| 123 | 1.8 | **概要设计** | 18d | 2017-12-25 20:00 | 2018-01-10 21:00 | 32 |  |
| 124 |  | 方案选择 | 1h | 2017-12-26 20:00 | 2017-12-26 21:00 |  |  |
| 125 |  | 功能分解（IPO图）绘制 | 3h | 2017-12-26 20:00 | 2017-12-28 21:00 |  |  |
| 126 |  | 软件结构设计 | 3h | 2018-01-02 20:00 | 2018-01-04 21:00 |  |  |
| 127 |  | 小组第十三周第二次会议 | 1h | 2017-12-29 20:00 | 2017-12-29 21:00 |  |  |
| 128 |  | 数据库设计 | 2h | 2018-01-02 20:00 | 2018-01-03 21:00 |  |  |
| 129 |  | 小组第十四周第一次会议 | 1h | 2018-01-05 20:00 | 2018-01-05 21:00 |  |  |
| 130 |  | 系统设计与实现计划 | 0h | 2018-01-07 20:00 | 2018-01-07 20:00 | 122FS+11h |  |
| 131 |  | 软件概要设计说明--初步 | 0h | 2018-01-08 20:00 | 2018-01-08 20:00 | 127FS+8h |  |
| 132 |  | 软件概要设计说明--修改 | 5h | 2018-01-08 18:00 | 2018-01-10 21:00 |  |  |
| 133 |  | 软件概要设计说明 | 0d | 2018-01-08 20:00 | 2018-01-08 20:00 |  |  |
| 134 |  | 编码实现 | 1d | 2018-01-11 20:00 | 2018-01-11 21:00 | 123 |  |
| 135 | 1.10 | **系统测试** | 4d | 2018-01-12 20:00 | 2018-01-13 21:00 | 134 |  |
| 136 |  | 单元测试 | 1d | 2018-01-12 20:00 | 2018-01-12 21:00 |  |  |
| 137 |  | 黑白盒测试 | 1d | 2018-01-12 20:00 | 2018-01-12 21:00 |  |  |
| 138 |  | 集成测试 | 1d | 2018-01-13 20:00 | 2018-01-13 21:00 |  |  |
| 139 |  | 测试计划 | 0h | 2018-01-13 20:00 | 2018-01-13 20:00 |  |  |
| 140 | 1.11 | **安装部署计划** | 1d | 2018-01-14 20:00 | 2018-01-14 21:00 | 135 |  |

| ID | WBS | Task | Duration | Start | Finish | Predecessors |
| --- | --- | --- | --- | --- | --- | --- |
| 141 |  | 安装部署计划报告 | 0d | 2018-01-14 20:00 | 2018-01-14 20:00 |  |
| 142 | 1.12 | **系统维护** | 1d | 2018-01-15 20:00 | 2018-01-15 21:00 | 140 |
| 143 |  | 系统维护报告 | 0d | 2018-01-15 20:00 | 2018-01-15 20:00 |  |
| 144 | 1.13 | **项目总结** | 9d | 2018-01-11 20:00 | 2018-01-15 21:00 | 123 |
| 145 |  | 项目分析 | 1d | 2018-01-11 20:00 | 2018-01-11 21:00 | 123 |
| 146 |  | 总结ppt | 1d | 2018-01-12 20:00 | 2018-01-12 21:00 | 145 |
| 147 |  | 项目总结报告 | 0h | 2018-01-14 20:00 | 2018-01-14 20:00 |  |

## Version 2 (data date 2017-10-28, saved 2017-11-26)

Note of the change: 用户群分类1.0 愿景与范围0.5，需求工程计划1.3，项目计划1.4，QA计划1.0

Last finish stays 2018-01-16. Complete tasks 52 → 57.

Added:

| ID | Task | Duration | Start | Finish | Resources |
| --- | --- | --- | --- | --- | --- |
| 72 | 创建平台端界面原型 | 4d | 2017-11-25 20:00 | 2017-11-26 21:00 | 于欣汝 |

Changed:

| ID | Task | Start | Finish | Duration | Complete | Predecessors | Other |
| --- | --- | --- | --- | --- | --- | --- | --- |
| 34 | **需求工程** |  |  |  | 26% → 27% |  |  |
| 36 | **需求获取活动** |  |  |  | 71% → 73% |  |  |
| 63 | 管理员用户代表第一次访谈 | 2017-11-08 20:00 → 2017-11-24 20:00 A (+16d) | 2017-11-08 21:00 → 2017-11-24 21:00 A (+16d) |  | 0% → 100% |  | was named 管理员用户代表访谈; resources 曾雨晴 → 曾雨晴; 靳泽旭; 奕吉; 于欣汝; 张旗 |
| 64 | **需求分析** |  | 2017-11-18 21:00 → 2017-11-28 21:00 (+10d) | 29d → 45d | 45% → 35% |  |  |
| 71 | 创建移动端界面原型 | 2017-11-04 18:00 A → 2017-11-25 20:00 A (+21d) | 2017-11-05 20:00 A → 2017-11-25 21:00 A (+20d) | 5h → 1h |  |  | was named 创建原形; resources 靳泽旭 [20%]; 于欣汝 [80%] → 靳泽旭 |
| 73 | 分析可实现性 | 2017-11-05 20:00 → 2017-11-26 18:00 (+21d) | 2017-11-05 21:00 → 2017-11-26 19:00 (+21d) |  |  | 71 → 65, 71 |  |
| 80 | 小组第七周第一次会议 | 2017-11-13 17:00 A | 2017-11-13 18:00 A |  | 0% → 100% |  |  |
| 88 | **规范说明** | 2017-11-16 20:00 A |  |  | 0% → 38% |  |  |
| 89 | 小组第七周第二次会议 | 2017-11-18 20:00 A | 2017-11-18 21:00 A |  | 0% → 100% |  |  |
| 95 | 小组第八周第一次会议 | 2017-11-20 17:00 A | 2017-11-20 18:00 A |  | 0% → 100% |  |  |
| 96 | 小组第八周第二次会议 | 2017-11-24 20:00 A | 2017-11-24 21:00 A |  | 0% → 100% |  |  |

## Version 3 (data date 2017-10-28, saved 2017-11-28)

Note of the change: （补）用户群分类1.2 愿景与范围0.5，SRS0.3,可行性1.1，项目计划1.5，需求工程计划1.4

Last finish stays 2018-01-16. Complete tasks 57 → 63.

Added:

| ID | Task | Duration | Start | Finish | Resources |
| --- | --- | --- | --- | --- | --- |
| 20 | 项目第一次与下达者访谈 | 1d | 2017-10-20 20:00 A | 2017-10-20 21:00 A | 曾雨晴; 靳泽旭; 奕吉; 于欣汝; 张旗 |
| 59 | 项目第二次与项目下达者访谈 | 1d | 2017-11-06 20:00 A | 2017-11-06 21:00 A | 曾雨晴; 靳泽旭; 奕吉; 于欣汝; 张旗 |
| 75 | 项目第一次与教师用户代表访谈 | 1d | 2017-11-27 20:00 A | 2017-11-27 21:00 A | 曾雨晴; 靳泽旭; 奕吉; 于欣汝; 张旗 |
| 99 | 项目第一次管理员用户代表访谈 | 1d | 2017-11-24 20:00 A | 2017-11-24 21:00 A | 曾雨晴; 靳泽旭; 奕吉; 于欣汝; 张旗 |

Removed: 59 重用已有的需求

Changed:

| ID | Task | Start | Finish | Complete |
| --- | --- | --- | --- | --- |
| 1 | **软件工程系列课程教学辅助网站** |  |  | 39% → 42% |
| 35 | **需求工程** |  |  | 27% → 31% |
| 37 | **需求获取活动** |  |  | 73% → 90% |
| 61 | 学生用户代表访谈 | 2017-11-18 20:00 A | 2017-11-19 19:00 A | 0% → 100% |
| 62 | 游客用户代表访谈 | 2017-11-18 20:00 A | 2017-11-18 21:00 A | 0% → 100% |
| 65 | **需求分析** |  |  | 35% → 38% |
| 90 | **规范说明** |  |  | 38% → 44% |

## Version 4 (data date 2017-10-28, saved 2017-12-10)

Note of the change: （本周）用户群分类1.3 愿景与范围0.6，SRS0.4,可行性1.1，项目计划1.6，需求工程计划1.5

Last finish stays 2018-01-16. Complete tasks 63 → 70.

Added:

| ID | Task | Duration | Start | Finish | Predecessors | Resources |
| --- | --- | --- | --- | --- | --- | --- |
| 107 | 教师用户界面设计与实现 | 3d | 2017-12-05 20:00 | 2017-12-07 21:00 |  | 于欣汝 |
| 112 | 管理员用户用例表设计 | 1d | 2017-12-09 20:00 | 2017-12-09 21:00 |  | 曾雨晴 |
| 113 | 教师、学生用户用例表设计 | 1d | 2017-12-09 20:00 | 2017-12-09 21:00 |  | 奕吉 |
| 114 | SRS初步 | 0d | 2017-12-10 20:00 | 2017-12-10 20:00 | 83 | 奕吉 |

Changed:

| ID | Task | Start | Finish | Duration | Complete | Other |
| --- | --- | --- | --- | --- | --- | --- |
| 1 | **软件工程系列课程教学辅助网站** |  |  |  | 42% → 45% |  |
| 35 | **需求工程** |  |  |  | 31% → 36% |  |
| 65 | **需求分析** |  | 2017-11-28 21:00 → 2017-12-12 21:00 (+14d) | 45d → 67d | 38% → 47% |  |
| 66 | **应用环境建模（生态环境图）** | 2017-10-31 20:00 A → 2017-10-31 20:00 | 2017-11-06 21:00 A → 2017-12-12 21:00 (+36d) | 11d → 67d |  | resources 奕吉 [50%]; 曾雨晴 [50%] → none |
| 74 | 分析可实现性 | 2017-11-26 18:00 A | 2017-11-26 19:00 → 2017-11-26 21:00 A | 1d → 3d | 0% → 100% |  |
| 79 | 排列需求优先级 | 2017-11-11 20:00 → 2017-12-12 20:00 (+31d) | 2017-11-11 21:00 → 2017-12-12 21:00 (+31d) |  |  |  |
| 80 | 相关文档修改、绘制uml图 | 2017-11-12 20:00 A | 2017-11-12 21:00 A |  | 0% → 100% |  |
| 83 | 需求工程计划 | 2017-11-18 18:00 → 2017-11-10 20:00 (-8d) | 2017-11-18 18:00 → 2017-11-10 20:00 (-8d) |  |  |  |
| 101 | **需求验证** |  | 2017-12-08 21:00 → 2017-12-10 21:00 (+2d) | 16d → 22d | 0% → 10% |  |
| 102 | 小组第九周第一次会议 | 2017-11-27 17:00 A | 2017-11-27 18:00 A |  | 0% → 100% |  |
| 106 | 小组第九周第二次会议 | 2017-12-01 20:00 A | 2017-12-01 21:00 A |  | 0% → 100% |  |
| 108 | 管理员用户界面设计与实现 |  |  |  |  | was named 模拟需求 |
| 109 | 小组第十周第一次会议 | 2017-12-04 17:00 A | 2017-12-04 18:00 A |  | 0% → 100% |  |
| 111 | 小组第十周第二次会议 | 2017-12-08 20:00 A | 2017-12-08 21:00 A |  | 0% → 100% |  |
| 115 | **需求管理** |  |  |  | 0% → 3% |  |
| 116 | 小组第十一周第一次会议 | 2017-12-11 17:00 A | 2017-12-11 18:00 A |  | 0% → 100% |  |
| 119 | 分析变更影响 | 2017-12-12 20:00 → 2017-12-13 20:00 (+1d) |  | 3h → 2h |  |  |

## Version 5 (data date 2017-10-28, saved 2017-12-16)

Note of the change: 【奕吉】需求工程计划1.5.1 项目计划1.6.1--由于根据本周实际内容在文档中增加相应的计划，版本后三位加一

Last finish stays 2018-01-16. Complete tasks 70 → 72.

Added:

| ID | Task | Duration | Start | Finish | Predecessors | Resources |
| --- | --- | --- | --- | --- | --- | --- |
| 120 | 与管理员用户代表第二次访谈 | 1d | 2017-12-15 20:00 A | 2017-12-15 21:00 A |  | 曾雨晴; 靳泽旭; 奕吉; 于欣汝; 张旗 |
| 121 | 管理员用例改进 | 1d | 2017-12-16 18:00 | 2017-12-16 19:00 | 120 | 曾雨晴; 靳泽旭 |
| 122 | 教师、学生用例改进 | 1d | 2017-12-16 18:00 | 2017-12-16 19:00 | 120 | 奕吉; 于欣汝 |
| 123 | 数据字典、er图改进 | 1d | 2017-12-16 18:00 | 2017-12-16 19:00 | 120 | 张旗 |
| 124 | SRS正式版第一版 | 0d | 2017-12-17 20:00 | 2017-12-17 20:00 | 114 |  |

Changed:

| ID | Task | Start | Finish | Complete | Predecessors |
| --- | --- | --- | --- | --- | --- |
| 115 | **需求管理** | 2017-12-11 20:00 A |  | 3% → 8% |  |
| 116 | 小组第十一周第一次会议 | 2017-12-11 17:00 A → 2017-12-11 20:00 A | 2017-12-11 18:00 A → 2017-12-11 21:00 A |  |  |
| 125 | 小组第十一周第二次会议 | 2017-12-15 20:00 A | 2017-12-15 21:00 A | 0% → 100% |  |
| 133 | 软件需求变更文档 |  |  |  | 132 → 124 |

## Version 6 (data date 2017-10-28, saved 2017-12-24)

Note of the change: 【奕吉】SRS0.5 用户分类1.4 项目计划1.6.2 需求工程计划1.5.2 用户手册0.2 愿景与范围文档0.7

Last finish stays 2018-01-16. Complete tasks 72 → 83.

Added:

| ID | Task | Duration | Start | Finish | Resources |
| --- | --- | --- | --- | --- | --- |
| 123 | 教师、学生、游客用户界面改进 | 1d | 2017-12-17 20:00 | 2017-12-17 21:00 | 于欣汝 |
| 124 | 管理员用户界面改进 | 1d | 2017-12-17 20:00 | 2017-12-17 21:00 | 靳泽旭 |
| 130 | JAD会议 | 1d | 2017-12-18 20:00 A | 2017-12-18 21:00 A | 曾雨晴; 靳泽旭; 奕吉; 于欣汝; 张旗 |
| 131 | SRS内部评审 | 1d | 2017-12-18 20:00 A | 2017-12-18 21:00 A | 曾雨晴; 靳泽旭; 奕吉; 于欣汝; 张旗 |
| 135 | 定义项目相关术语 | 1d | 2017-12-22 20:00 A | 2017-12-22 21:00 A | 曾雨晴; 靳泽旭; 奕吉; 于欣汝; 张旗 |
| 136 | 根据评审内容修改数据字典 | 1d | 2017-12-23 20:00 | 2017-12-23 21:00 | 张旗 |
| 137 | 根据评审内容修改管理员相关内容 | 1d | 2017-12-23 20:00 | 2017-12-23 21:00 | 曾雨晴; 靳泽旭 |
| 138 | 根据评审内容修改教师、学生相关内容 | 1d | 2017-12-23 20:00 | 2017-12-23 21:00 | 奕吉 |
| 139 | 根据评审内容修改主界面 | 1d | 2017-12-23 20:00 | 2017-12-23 21:00 | 于欣汝 |

Removed: 110 软件需求规格说书

Changed:

| ID | Task | Start | Finish | Duration | Complete | Predecessors | Other |
| --- | --- | --- | --- | --- | --- | --- | --- |
| 1 | **软件工程系列课程教学辅助网站** |  |  |  | 45% → 51% |  |  |
| 35 | **需求工程** |  |  |  | 36% → 45% |  |  |
| 37 | **需求获取活动** |  | 2017-11-27 21:00 A |  | 90% → 100% |  |  |
| 38 | **建立业务需求** |  | 2017-11-04 21:00 A |  | 33% → 100% |  |  |
| 39 | **定义产品愿景和项目范围** |  |  |  | 0% → 100% |  |  |
| 40 | 建立业务目标模型 | 2017-10-30 20:00 A | 2017-10-30 21:00 A |  | 0% → 100% |  |  |
| 41 | 干系人评审模型 | 2017-11-02 20:00 A | 2017-11-02 21:00 → 2017-11-02 20:00 A | 1h → 0h | 0% → 100% |  |  |
| 42 | 项目愿景与范围文档 | 2017-10-28 20:00 A | 2017-10-28 20:00 A |  | 0% → 100% |  |  |
| 60 | 检查问题报告 | 2017-11-07 20:00 A | 2017-11-07 21:00 A |  | 0% → 100% |  |  |
| 65 | **需求分析** |  |  |  | 47% → 44% |  |  |
| 72 | 创建管理员界面原型 |  | 2017-11-25 21:00 A → 2017-11-25 21:00 |  | 100% → 0% |  | was named 创建移动端界面原型 |
| 73 | 创建教师、学生、游客界面原型 |  |  |  |  |  | was named 创建平台端界面原型 |
| 101 | **需求验证** |  | 2017-12-10 21:00 → 2017-12-17 21:00 (+7d) | 22d → 33d |  |  |  |
| 114 | **需求管理** |  |  |  | 8% → 39% |  |  |
| 117 | 建立基线、管理需求版本 | 2017-12-18 20:00 A | 2017-12-20 21:00 A |  | 0% → 100% |  |  |
| 125 | SRS正式版第一版 | 2017-12-17 20:00 A | 2017-12-17 20:00 A |  | 0% → 100% |  | resources none → 曾雨晴; 靳泽旭; 奕吉; 于欣汝; 张旗 |
| 127 | 维护变更历史 | 2017-12-18 20:00 → 2017-12-20 20:00 (+2d) | 2017-12-21 21:00 → 2017-12-20 21:00 (-1d) | 4h → 1h |  |  |  |
| 128 | 小组第十二周第一次会议 | 2017-12-17 17:00 → 2017-12-18 20:00 A (+1d) | 2017-12-17 18:00 → 2017-12-18 21:00 A (+1d) |  | 0% → 100% |  |  |
| 129 | 跟踪需求状态 | 2017-12-17 20:00 A | 2017-12-21 21:00 A |  | 0% → 100% |  |  |
| 132 | 跟踪需求问题 | 2017-12-18 20:00 → 2017-12-19 20:00 (+1d) | 2017-12-21 21:00 → 2017-12-20 21:00 (-1d) | 4h → 2h |  |  |  |
| 134 | 小组第十二周第二次会议 | 2017-12-22 20:00 A | 2017-12-22 21:00 A |  | 0% → 100% |  |  |
| 143 | 软件需求变更文档修改 |  |  |  |  | 软件需求规格说书FS+45h → none |  |

## Version 7 (data date 2017-10-28, saved 2017-12-30)

Note of the change: 【奕吉】（遗漏补）项目计划1.6.3

Last finish stays 2018-01-16. Complete tasks 83 → 85.

Added:

| ID | Task | Duration | Start | Finish | Resources |
| --- | --- | --- | --- | --- | --- |
| 142 | 修改各自负责文档 | 1d | 2017-12-30 20:00 A | 2017-12-30 21:00 A | 曾雨晴; 靳泽旭; 奕吉; 于欣汝; 张旗 |

Removed: 143 软件需求变更文档修改; 148 小组第十三周第二次会议

Changed:

| ID | Task | Start | Finish | Duration | Complete | Predecessors |
| --- | --- | --- | --- | --- | --- | --- |
| 1 | **软件工程系列课程教学辅助网站** |  |  |  | 51% → 53% |  |
| 35 | **需求工程** |  |  |  | 45% → 46% |  |
| 114 | **需求管理** |  | 2017-12-30 21:00 → 2018-01-07 21:00 (+8d) | 28h → 37h | 39% → 44% |  |
| 141 | 小组第十三周第一次会议 | 2017-12-25 17:00 A | 2017-12-25 18:00 A |  | 0% → 100% |  |
| 143 | 软件需求变更文档 | 2017-12-25 20:00 → 2018-01-05 20:00 (+11d) | 2017-12-25 20:00 → 2018-01-05 20:00 (+11d) |  |  |  |
| 145 | 方案选择 | 2017-12-26 20:00 → 2018-01-02 20:00 (+7d) | 2017-12-26 21:00 → 2018-01-02 21:00 (+7d) |  |  |  |
| 146 | 功能分解（IPO图）绘制 | 2017-12-26 20:00 → 2018-01-02 20:00 (+7d) | 2017-12-28 21:00 → 2018-01-02 21:00 (+5d) | 3h → 1h |  |  |
| 147 | 软件结构设计 | 2018-01-02 20:00 → 2018-01-03 20:00 (+1d) | 2018-01-04 21:00 → 2018-01-03 21:00 (-1d) | 3h → 1h |  |  |
| 150 | 系统设计与实现计划 |  |  |  |  | 软件需求变更文档修改FS+11h → none |
| 151 | 软件概要设计说明--初步 |  |  |  |  | 小组第十三周第二次会议FS+8h → none |
