# PRD2017G09-软件工程系列课程教学辅助网站-项目计划甘特图V1.1-曾雨晴

How a schedule from MS Project changed from version to version. A marks actual dates.

## Version 1 (data date 2017-10-28, saved 2017-11-04, file PRD2017G09-软件工程系列课程教学辅助网站-项目计划甘特图V1.2-曾雨晴.mpp)

Note of the change: [曾雨晴]提交修改过的甘特图、WBS、项目计划（V1.1)，新增项目输入输出文档。

| ID | WBS | Task | Duration | Start | Finish | Predecessors | Complete |
| --- | --- | --- | --- | --- | --- | --- | --- |
| 1 | 1 | **软件工程系列课程教学辅助网站** | 154d | 2017-09-28 20:00 A | 2018-01-16 21:00 |  | 31% |
| 2 | 1.1 | **项目前期准备** | 6h | 2017-09-28 20:00 A | 2017-10-04 21:00 |  | 100% |
| 3 | 1.1.1 | **项目范围选定** | 1h | 2017-09-28 20:00 A | 2017-09-28 21:00 A |  | 100% |
| 4 |  | 类似项目案例分析 | 1h | 2017-09-28 20:00 A | 2017-09-28 21:00 A |  | 100% |
| 5 |  | 小组第一周会议（讨论项目选题和后期分配资源） | 1h | 2017-09-28 20:00 A | 2017-09-28 21:00 A | 4 | 100% |
| 6 |  | 获取项目开发硬件资源 | 5h | 2017-09-29 20:00 A | 2017-10-03 21:00 A | 3 | 100% |
| 7 |  | logo设计 | 4h | 2017-09-29 20:00 A | 2017-09-30 21:00 A | 3 | 100% |
| 8 |  | 项目选定和开发软硬件的获得 | 0d | 2017-10-03 20:00 A | 2017-10-03 20:00 A | 6 | 100% |
| 9 |  | 小组第二周第一次会议记录 | 1h | 2017-10-09 17:00 A | 2017-10-09 18:00 A |  | 100% |
| 10 |  | 小组第二周第二次会议记录 | 1h | 2017-10-13 20:00 A | 2017-10-13 21:00 A |  | 100% |
| 11 | 1.4 | **项目计划** | 32d | 2017-10-10 20:00 | 2017-10-29 21:00 | 8 | 97% |
| 12 |  | 甘特图绘制V0.1 | 4h | 2017-10-09 20:00 A | 2017-10-12 21:00 A | 2 | 100% |
| 13 |  | WBS绘制 | 2h | 2017-10-13 20:00 A | 2017-10-14 19:00 A | 12 | 100% |
| 14 |  | OBS绘制 | 2h | 2017-10-14 19:00 A | 2017-10-14 21:00 A | 13 | 100% |
| 15 |  | 风险管理 | 2h | 2017-10-13 20:00 A | 2017-10-14 19:00 A | 12 | 100% |
| 16 |  | 版本控制系统配置 | 3h | 2017-10-11 20:00 A | 2017-10-13 21:00 A | 12 | 100% |
| 17 |  | 项目计划V0.1 | 0d | 2017-10-15 20:00 A | 2017-10-15 20:00 A | 2 | 100% |
| 18 |  | 甘特图完善V0.2 | 3h | 2017-10-17 20:00 A | 2017-10-19 21:00 A | 17 | 100% |
| 19 |  | 项目计划完善V0.2 | 0h | 2017-10-20 20:00 A | 2017-10-20 20:00 A | 18 | 100% |
| 20 |  | 小组第三周第一次会议 | 1d | 2017-10-20 12:00 A | 2017-10-20 13:00 A |  | 100% |
| 21 |  | 小组第三周第二次会议 | 1d | 2017-10-20 20:00 A | 2017-10-20 21:00 A |  | 100% |
| 22 |  | 小组第四周第一次会议 | 1d | 2017-10-23 17:00 A | 2017-10-23 18:00 A |  | 100% |
| 23 |  | 质量保证计划 | 1h | 2017-10-23 20:00 A | 2017-10-23 21:00 A | 19 | 100% |
| 24 |  | 人力资源配置 | 1h | 2017-10-23 20:00 A | 2017-10-23 21:00 A | 19 | 100% |
| 25 |  | 成本预算 | 1h | 2017-10-26 20:00 A | 2017-10-26 21:00 A | 23 | 100% |
| 26 |  | 甘特图完善V1.0 | 3h | 2017-10-27 20:00 A | 2017-10-28 20:00 A | 25 | 100% |
| 27 |  | WBS、OBS修改 | 4h | 2017-10-28 20:00 A | 2017-10-29 21:00 | 26 | 75% |
| 28 |  | 项目计划完善V1.0 | 0h | 2017-10-28 20:00 A | 2017-10-28 20:00 A | 26 | 100% |
| 29 |  | 小组第四周第二次会议 | 1h | 2017-10-27 19:30 A | 2017-10-27 20:30 A |  | 100% |
| 30 |  | 项目章程 | 0h | 2017-10-27 20:00 A | 2017-10-27 20:00 A | 28 | 100% |
| 31 |  | 项目启动 | 0d | 2017-10-27 20:00 | 2017-10-27 20:00 | 30 |  |
| 32 |  | 需求工程计划-初步 | 0h | 2017-10-26 20:00 A | 2017-10-26 20:00 A | 31 | 100% |
| 33 |  | QA计划初步 | 0h | 2017-10-28 20:00 A | 2017-10-28 20:00 A | 23 | 100% |
| 34 | 1.7 | **需求工程** | 90d | 2017-10-29 20:00 | 2017-12-25 21:00 | 32 | 15% |
| 35 |  | 小组第五周第一次会议 | 1h | 2017-10-30 17:00 A | 2017-10-30 18:00 A |  | 100% |
| 36 | 1.7.2 | **需求获取活动** | 17d | 2017-10-29 20:00 | 2017-11-10 21:00 |  | 65% |
| 37 | 1.7.2.1 | **建立业务需求** | 8h | 2017-10-30 20:00 A | 2017-11-04 21:00 |  | 33% |
| 38 | 1.7.2.1.1 | **定义产品愿景和项目范围** | 5h | 2017-10-30 20:00 | 2017-11-03 21:00 |  |  |
| 39 |  | 建立业务目标模型 | 1h | 2017-10-30 20:00 | 2017-10-30 21:00 | 35 |  |
| 40 |  | 干系人评审模型 | 1h | 2017-11-02 20:00 | 2017-11-02 21:00 | 39 |  |
| 41 |  | 解决业务需求冲突 | 1h | 2017-11-04 20:00 A | 2017-11-04 21:00 A | 40 | 100% |
| 42 | 1.7.2.2 | **识别用户群** | 2h | 2017-10-31 20:00 | 2017-11-01 21:00 A |  | 100% |
| 43 |  | 选择产品代言人，记录产品代言人的期望 | 1h | 2017-10-28 20:00 A | 2017-10-28 21:00 A | 33 | 100% |
| 44 |  | 用户分类 | 1h | 2017-10-31 20:00 A | 2017-10-31 21:00 A | 39 | 100% |
| 45 |  | 识别用户类别 | 1h | 2017-11-01 20:00 A | 2017-11-01 21:00 A | 44 | 100% |
| 46 |  | 举行引导式需求获取讨论会 | 1d | 2017-11-02 20:00 A | 2017-11-02 21:00 A | 45 | 100% |
| 47 |  | QA计划 | 0h | 2017-11-02 20:00 A | 2017-11-02 20:00 A | 45 | 100% |
| 48 |  | 小组第五周第二次会议 | 0h | 2017-11-03 20:00 A | 2017-11-03 21:00 A | 46 | 100% |
| 49 |  | 相关文档修改 | 1d | 2017-11-05 20:00 | 2017-11-05 21:00 |  |  |
| 50 |  | 组织焦点小组 | 1h | 2017-11-04 18:00 A | 2017-11-04 19:00 A | 48 | 100% |
| 51 |  | 识别用户需求 | 1d | 2017-11-04 18:00 A | 2017-11-04 19:00 A | 48 | 100% |
| 52 |  | 识别系统事件和响应 | 3h | 2017-11-04 18:00 A | 2017-11-04 21:00 A | 48 | 100% |
| 53 |  | 观察用户如何完成工作 | 4d | 2017-11-04 18:00 A | 2017-11-05 19:00 A | 48 | 100% |
| 54 |  | 分发问卷调查 | 1d | 2017-11-04 18:00 A | 2017-11-04 19:00 A | 48 | 100% |
| 55 |  | 举办需求获取访谈 | 3h | 2017-11-05 18:00 A | 2017-11-05 21:00 A | 52 | 100% |
| 56 |  | 分析文档 | 1d | 2017-11-05 18:00 A | 2017-11-05 19:00 A | 54 | 100% |
| 57 |  | 检查问题报告 | 1h | 2017-11-07 20:00 | 2017-11-07 21:00 |  |  |
| 58 |  | 重用已有的需求 | 2d | 2017-11-07 20:00 | 2017-11-08 21:00 |  |  |
| 59 |  | 学生用户代表访谈 | 2h | 2017-11-08 20:00 | 2017-11-09 21:00 |  |  |
| 60 |  | 游客用户代表访谈 | 1h | 2017-11-08 20:00 | 2017-11-08 21:00 |  |  |
| 61 |  | 教师用户代表访谈 | 1h | 2017-11-09 20:00 | 2017-11-09 21:00 |  |  |
| 62 |  | 管理员用户代表访谈 | 1h | 2017-11-08 20:00 | 2017-11-08 21:00 |  |  |
| 63 | 1.7.3 | **需求分析** | 29d | 2017-10-31 20:00 | 2017-11-18 21:00 | 36 |  |
| 64 |  | 应用环境建模（生态环境图） | 4d | 2017-10-31 20:00 | 2017-11-03 21:00 |  |  |
| 65 |  | 创建原形 | 5h | 2017-11-04 18:00 | 2017-11-05 20:00 | 48 |  |
| 66 |  | 分析可实现性 | 1d | 2017-11-05 20:00 | 2017-11-05 21:00 | 65 |  |
| 67 |  | 小组第六周第一次会议 | 1h | 2017-11-06 17:00 | 2017-11-06 18:00 |  |  |
| 68 |  | 需求工程计划-修改 | 1h | 2017-11-09 20:00 | 2017-11-09 21:00 | 62 |  |
| 69 |  | 小组第六周第二次会议 | 1h | 2017-11-10 20:00 | 2017-11-10 21:00 |  |  |
| 70 |  | 排列需求优先级 | 1d | 2017-11-11 20:00 | 2017-11-11 21:00 |  |  |

| ID | WBS | Task | Duration | Start | Finish | Predecessors |
| --- | --- | --- | --- | --- | --- | --- |
| 71 |  | 创建数据字典和ER图 | 4h | 2017-11-14 20:00 | 2017-11-17 21:00 |  |
| 72 |  | 小组第七周第一次会议 | 1h | 2017-11-13 17:00 | 2017-11-13 18:00 |  |
| 73 |  | 需求工程计划 | 0d | 2017-11-18 18:00 | 2017-11-18 18:00 | 68 |
| 74 | 1.7.3.11 | **需求建模** | 9d | 2017-11-11 20:00 | 2017-11-17 21:00 |  |
| 75 |  | 数据流图绘制 | 1h | 2017-11-12 20:00 | 2017-11-12 21:00 |  |
| 76 |  | 转态转移图 | 3h | 2017-11-11 20:00 | 2017-11-12 20:00 |  |
| 77 |  | 决策树 | 1h | 2017-11-12 20:00 | 2017-11-12 21:00 |  |
| 78 |  | 分析接口 | 1d | 2017-11-11 20:00 | 2017-11-11 21:00 |  |
| 79 |  | 将需求分配到子系统 | 2h | 2017-11-14 20:00 | 2017-11-15 21:00 |  |
| 80 | 1.7.4 | **规范说明** | 21h | 2017-11-16 20:00 | 2017-11-28 21:00 | 63 |
| 81 |  | 小组第七周第二次会议 | 1h | 2017-11-18 20:00 | 2017-11-18 21:00 |  |
| 82 |  | 采用需求文档模板 | 1d | 2017-11-18 20:00 | 2017-11-18 21:00 |  |
| 83 |  | 识别需求源头 | 1h | 2017-11-19 18:00 | 2017-11-19 19:00 | 82 |
| 84 |  | 为每个需求分配唯一标示 | 1h | 2017-11-19 19:00 | 2017-11-19 20:00 | 83 |
| 85 |  | 记录业务规则 | 1h | 2017-11-16 20:00 | 2017-11-16 21:00 |  |
| 86 |  | 描述非功能性需求 | 1h | 2017-11-19 20:00 | 2017-11-27 21:00 |  |
| 87 |  | 小组第八周第一次会议 | 1h | 2017-11-20 17:00 | 2017-11-20 18:00 |  |
| 88 |  | 小组第八周第二次会议 | 1h | 2017-11-24 20:00 | 2017-11-24 21:00 |  |
| 89 |  | 需求规格说明书--初步 | 0d | 2017-11-28 20:00 | 2017-11-28 20:00 | 86 |
| 90 | 1.7.5 | **需求验证** | 16d | 2017-11-27 20:00 | 2017-12-08 21:00 | 63 |
| 91 |  | 小组第九周第一次会议 | 1h | 2017-11-27 17:00 | 2017-11-27 18:00 |  |
| 92 |  | 评审需求 | 10h | 2017-11-28 20:00 | 2017-12-03 21:00 | 36 |
| 93 |  | 测试需求 | 10h | 2017-11-29 20:00 | 2017-12-04 21:00 | 36 |
| 94 |  | 定义验收条件 | 5h | 2017-11-30 20:00 | 2017-12-02 21:00 |  |
| 95 |  | 小组第九周第二次会议 | 0h | 2017-12-01 20:00 | 2017-12-01 21:00 |  |
| 96 |  | 模拟需求 | 7h | 2017-12-02 18:00 | 2017-12-04 21:00 | 94 |
| 97 |  | 小组第十周第一次会议 | 1h | 2017-12-04 17:00 | 2017-12-04 18:00 |  |
| 98 |  | 软件需求规格说书 | 0d | 2017-11-28 20:00 | 2017-11-28 20:00 | 89 |
| 99 |  | 小组第十周第二次会议 | 1h | 2017-12-08 20:00 | 2017-12-08 21:00 |  |
| 100 | 1.7.6 | **需求管理** | 28h | 2017-12-11 20:00 | 2017-12-30 21:00 | 90 |
| 101 |  | 小组第十一周第一次会议 | 1h | 2017-12-11 17:00 | 2017-12-11 18:00 |  |
| 102 |  | 建立变更控制流程 | 3h | 2017-12-12 20:00 | 2017-12-14 21:00 |  |
| 103 |  | 建立基线、管理需求版本 | 3h | 2017-12-18 20:00 | 2017-12-20 21:00 | 102FS+7h |
| 104 |  | 分析变更影响 | 3h | 2017-12-12 20:00 | 2017-12-14 21:00 |  |
| 105 |  | 小组第十一周第二次会议 | 1h | 2017-12-15 20:00 | 2017-12-15 21:00 |  |
| 106 |  | 维护变更历史 | 4h | 2017-12-18 20:00 | 2017-12-21 21:00 |  |
| 107 |  | 小组第十二周第一次会议 | 1h | 2017-12-17 17:00 | 2017-12-17 18:00 |  |
| 108 |  | 跟踪需求状态 | 5h | 2017-12-17 20:00 | 2017-12-21 21:00 |  |
| 109 |  | 跟踪需求问题 | 4h | 2017-12-18 20:00 | 2017-12-21 21:00 |  |
| 110 |  | 维护需求可跟踪矩阵 | 2h | 2017-12-19 20:00 | 2017-12-20 21:00 |  |
| 111 |  | 小组第十二周第二次会议 | 1h | 2017-12-22 20:00 | 2017-12-22 21:00 |  |
| 112 |  | 使用需求管理工具 | 4h | 2017-12-23 20:00 | 2017-12-24 21:00 |  |
| 113 |  | 软件需求变更文档 | 0d | 2017-12-25 20:00 | 2017-12-25 20:00 | 112 |
| 114 |  | 小组第十三周第一次会议 | 1h | 2017-12-25 17:00 | 2017-12-25 18:00 |  |
| 115 |  | 软件需求变更文档修改 | 1h | 2017-12-27 20:00 | 2017-12-27 21:00 | 98FS+45h |
| 116 | 1.8 | **概要设计** | 18d | 2017-12-25 20:00 | 2018-01-10 21:00 | 32 |
| 117 |  | 方案选择 | 1h | 2017-12-26 20:00 | 2017-12-26 21:00 |  |
| 118 |  | 功能分解（IPO图）绘制 | 3h | 2017-12-26 20:00 | 2017-12-28 21:00 |  |
| 119 |  | 软件结构设计 | 3h | 2018-01-02 20:00 | 2018-01-04 21:00 |  |
| 120 |  | 小组第十三周第二次会议 | 1h | 2017-12-29 20:00 | 2017-12-29 21:00 |  |
| 121 |  | 数据库设计 | 2h | 2018-01-02 20:00 | 2018-01-03 21:00 |  |
| 122 |  | 小组第十四周第一次会议 | 1h | 2018-01-05 20:00 | 2018-01-05 21:00 |  |
| 123 |  | 系统设计与实现计划 | 0h | 2018-01-07 20:00 | 2018-01-07 20:00 | 115FS+11h |
| 124 |  | 软件概要设计说明--初步 | 0h | 2018-01-08 20:00 | 2018-01-08 20:00 | 120FS+8h |
| 125 |  | 软件概要设计说明--修改 | 5h | 2018-01-08 18:00 | 2018-01-10 21:00 |  |
| 126 |  | 软件概要设计说明 | 0d | 2018-01-08 20:00 | 2018-01-08 20:00 |  |
| 127 |  | 编码实现 | 1d | 2018-01-11 20:00 | 2018-01-11 21:00 | 116 |
| 128 | 1.10 | **系统测试** | 4d | 2018-01-12 20:00 | 2018-01-13 21:00 | 127 |
| 129 |  | 单元测试 | 1d | 2018-01-12 20:00 | 2018-01-12 21:00 |  |
| 130 |  | 黑白盒测试 | 1d | 2018-01-12 20:00 | 2018-01-12 21:00 |  |
| 131 |  | 集成测试 | 1d | 2018-01-13 20:00 | 2018-01-13 21:00 |  |
| 132 |  | 测试计划 | 0h | 2018-01-13 20:00 | 2018-01-13 20:00 |  |
| 133 | 1.11 | **安装部署计划** | 1d | 2018-01-14 20:00 | 2018-01-14 21:00 | 128 |
| 134 |  | 安装部署计划报告 | 0d | 2018-01-14 20:00 | 2018-01-14 20:00 |  |
| 135 | 1.12 | **系统维护** | 1d | 2018-01-15 20:00 | 2018-01-15 21:00 | 133 |
| 136 |  | 系统维护报告 | 0d | 2018-01-15 20:00 | 2018-01-15 20:00 |  |
| 137 | 1.13 | **项目总结** | 9d | 2018-01-11 20:00 | 2018-01-15 21:00 | 116 |
| 138 |  | 项目分析 | 1d | 2018-01-11 20:00 | 2018-01-11 21:00 | 116 |
| 139 |  | 总结ppt | 1d | 2018-01-12 20:00 | 2018-01-12 21:00 | 138 |
| 140 |  | 项目总结报告 | 0h | 2018-01-14 20:00 | 2018-01-14 20:00 |  |

## Version 2 (data date 2017-10-28, saved 2017-11-11, file PRD2017G09-软件工程系列课程教学辅助网站-需求项目计划甘特图V1.3-曾雨晴.mpp)

Note of the change: Merge branch '非可控文件' of github.com:moritashin/PRD2017-09 into 非可控文件

Last finish stays 2018-01-16. Complete tasks 42 → 45.

Added:

| ID | Task | Duration | Start | Finish | Predecessors | Resources |
| --- | --- | --- | --- | --- | --- | --- |
| 41 | 项目愿景与范围文档 | 0d | 2017-10-28 20:00 | 2017-10-28 20:00 | 33 | 曾雨晴; 奕吉 |
| 72 | 相关文档修改、绘制uml图 | 1d | 2017-11-12 20:00 | 2017-11-12 21:00 |  | 曾雨晴; 靳泽旭; 奕吉; 于欣汝; 张旗 |

Removed: 127 编码实现; 128 系统测试; 129 单元测试; 130 黑白盒测试; 131 集成测试; 132 测试计划; 133 安装部署计划; 134 安装部署计划报告; 135 系统维护; 136 系统维护报告

Changed:

| ID | Task | Start | Finish | Complete | Predecessors |
| --- | --- | --- | --- | --- | --- |
| 1 | **软件工程系列课程教学辅助网站** |  |  | 31% → 35% |  |
| 34 | **需求工程** |  |  | 15% → 20% |  |
| 37 | **建立业务需求** | 2017-10-30 20:00 A → 2017-10-30 20:00 |  |  |  |
| 43 | **识别用户群** |  |  |  | none → 41 |
| 64 | **需求分析** | 2017-10-31 20:00 A |  | 0% → 21% |  |
| 65 | 应用环境建模（生态环境图） | 2017-10-31 20:00 A | 2017-11-03 21:00 A | 0% → 100% |  |
| 68 | 小组第六周第一次会议 | 2017-11-06 17:00 A | 2017-11-06 18:00 A | 0% → 100% |  |
| 70 | 小组第六周第二次会议 | 2017-11-10 20:00 A | 2017-11-10 21:00 A | 0% → 100% |  |

## Version 3 (data date 2017-10-28, saved 2017-11-20, file PRD2017G09-软件工程系列课程教学辅助网站-需求项目计划甘特图V1.5.mpp)

Note of the change: [曾雨晴]增加了甘特图中关于UML相关图绘制的项目

Last finish stays 2018-01-16. Complete tasks 45 → 52.

Added:

| ID | Task | Duration | Start | Finish | Resources |
| --- | --- | --- | --- | --- | --- |
| 66 | 绘制管理员用例图 | 2d | 2017-11-05 20:00 A | 2017-11-06 21:00 A | 曾雨晴 |
| 67 | 绘制部分初步定义类图 | 2d | 2017-11-05 20:00 A | 2017-11-06 21:00 A | 靳泽旭 |
| 68 | 绘制部分系统状态图、部署图 | 1d | 2017-11-04 20:00 A | 2017-11-04 21:00 A | 奕吉 |
| 69 | 绘制部分初步定义顺序图、协作图 | 1d | 2017-11-05 20:00 A | 2017-11-05 21:00 A | 曾雨晴 |
| 70 | 绘制部分初步定义用例图 | 1d | 2017-11-05 20:00 A | 2017-11-05 21:00 A | 张旗 |

Changed:

| ID | Task | Start | Finish | Duration | Complete | Other |
| --- | --- | --- | --- | --- | --- | --- |
| 1 | **软件工程系列课程教学辅助网站** |  |  |  | 35% → 39% |  |
| 34 | **需求工程** |  |  |  | 20% → 26% |  |
| 36 | **需求获取活动** |  | 2017-11-10 21:00 → 2017-11-27 21:00 (+17d) | 17d → 46d | 65% → 71% |  |
| 50 | 相关文档修改 | 2017-11-05 20:00 A | 2017-11-05 21:00 A |  | 0% → 100% |  |
| 59 | 重用已有的需求 |  |  |  |  | resources 靳泽旭 → 张旗 |
| 60 | 学生用户代表访谈 | 2017-11-08 20:00 → 2017-11-18 20:00 (+10d) | 2017-11-09 21:00 → 2017-11-19 19:00 (+10d) |  |  | resources 于欣汝 → 靳泽旭 |
| 61 | 游客用户代表访谈 | 2017-11-08 20:00 → 2017-11-18 20:00 (+10d) | 2017-11-08 21:00 → 2017-11-18 21:00 (+10d) |  |  | resources 张旗 → 靳泽旭 |
| 62 | 教师用户代表访谈 | 2017-11-09 20:00 → 2017-11-27 20:00 A (+18d) | 2017-11-09 21:00 → 2017-11-27 21:00 A (+18d) |  | 0% → 100% | resources 曾雨晴 → 奕吉 |
| 63 | 管理员用户代表访谈 |  |  |  |  | resources 奕吉 → 曾雨晴 |
| 64 | **需求分析** |  |  |  | 21% → 45% |  |
| 65 | **应用环境建模（生态环境图）** |  | 2017-11-03 21:00 A → 2017-11-06 21:00 A (+3d) | 4d → 11d |  |  |
| 71 | 创建原形 | 2017-11-04 18:00 A | 2017-11-05 20:00 A |  | 0% → 100% |  |

## Version 4 (data date 2017-10-28, saved 2017-11-24, file PRD2017G09-软件工程系列课程教学辅助网站-需求项目计划甘特图V1.6.mpp)

Note of the change: [曾雨晴]提交了项目计划、需求项目计划V1.3，甘特图V1.6，部分用例表

Last finish stays 2018-01-16. Complete tasks 52 → 57.

Added:

| ID | Task | Duration | Start | Finish | Resources |
| --- | --- | --- | --- | --- | --- |
| 72 | 创建平台端界面原型 | 4d | 2017-11-25 20:00 | 2017-11-26 21:00 | 于欣汝 |

Changed:

| ID | Task | Start | Finish | Duration | Complete | Predecessors | Other |
| --- | --- | --- | --- | --- | --- | --- | --- |
| 1 | **软件工程系列课程教学辅助网站** |  |  |  | 39% → 40% |  |  |
| 34 | **需求工程** |  |  |  | 26% → 27% |  |  |
| 36 | **需求获取活动** |  |  |  | 71% → 74% |  |  |
| 63 | 管理员用户代表第一次访谈 | 2017-11-08 20:00 → 2017-11-24 20:00 A (+16d) | 2017-11-08 21:00 → 2017-11-24 21:00 A (+16d) |  | 0% → 100% |  | was named 管理员用户代表访谈; resources 曾雨晴 → 曾雨晴; 靳泽旭; 奕吉; 于欣汝; 张旗 |
| 64 | **需求分析** |  | 2017-11-18 21:00 → 2017-11-28 21:00 (+10d) | 29d → 45d | 45% → 35% |  |  |
| 71 | 创建移动端界面原型 | 2017-11-04 18:00 A → 2017-11-25 20:00 A (+21d) | 2017-11-05 20:00 A → 2017-11-25 21:00 A (+20d) | 5h → 1h |  |  | was named 创建原形; resources 靳泽旭 [20%]; 于欣汝 [80%] → 靳泽旭 |
| 73 | 分析可实现性 | 2017-11-05 20:00 → 2017-11-26 18:00 (+21d) | 2017-11-05 21:00 → 2017-11-26 19:00 (+21d) |  |  | 71 → 65, 71 |  |
| 80 | 小组第七周第一次会议 | 2017-11-13 17:00 A | 2017-11-13 18:00 A |  | 0% → 100% |  |  |
| 88 | **规范说明** | 2017-11-16 20:00 A |  |  | 0% → 38% |  |  |
| 89 | 小组第七周第二次会议 | 2017-11-18 20:00 A | 2017-11-18 21:00 A |  | 0% → 100% |  |  |
| 95 | 小组第八周第一次会议 | 2017-11-20 17:00 A | 2017-11-20 18:00 A |  | 0% → 100% |  |  |
| 96 | 小组第八周第二次会议 | 2017-11-24 20:00 A | 2017-11-24 21:00 A |  | 0% → 100% |  |  |

## Version 5 (data date 2017-10-28, saved 2017-11-28, file PRD2017G09-软件工程系列课程教学辅助网站-需求项目计划甘特图V1.7.mpp)

Note of the change: Merge branch '非可控文件' of github.com:moritashin/PRD2017-09 into 非可控文件

Last finish stays 2018-01-16. Complete tasks 57 → 63.

Added:

| ID | Task | Duration | Start | Finish | Resources |
| --- | --- | --- | --- | --- | --- |
| 20 | 项目第一次与下达者访谈 | 1d | 2017-10-20 20:00 A | 2017-10-20 21:00 A | 曾雨晴; 靳泽旭; 奕吉; 于欣汝; 张旗 |
| 59 | 项目第二次与项目下达者访谈 | 1d | 2017-11-06 20:00 A | 2017-11-06 21:00 A | 曾雨晴; 靳泽旭; 奕吉; 于欣汝; 张旗 |
| 75 | 项目第一次与教师用户代表访谈 | 1d | 2017-11-27 20:00 A | 2017-11-27 21:00 A | 曾雨晴; 靳泽旭; 奕吉; 于欣汝; 张旗 |
| 99 | 小组第一次管理员用户代表访谈 | 1d | 2017-11-24 20:00 A | 2017-11-24 21:00 A | 曾雨晴; 靳泽旭; 奕吉; 于欣汝; 张旗 |

Removed: 59 重用已有的需求

Changed:

| ID | Task | Start | Finish | Complete |
| --- | --- | --- | --- | --- |
| 1 | **软件工程系列课程教学辅助网站** |  |  | 40% → 43% |
| 35 | **需求工程** |  |  | 27% → 31% |
| 37 | **需求获取活动** |  |  | 74% → 90% |
| 61 | 学生用户代表访谈 | 2017-11-18 20:00 A | 2017-11-19 19:00 A | 0% → 100% |
| 62 | 游客用户代表访谈 | 2017-11-18 20:00 A | 2017-11-18 21:00 A | 0% → 100% |
| 65 | **需求分析** |  |  | 35% → 38% |
| 90 | **规范说明** |  |  | 38% → 44% |
