# PRD2017G09-软件工程系列课程教学辅助网站-项目计划甘特图V1.1-曾雨晴

How a schedule from MS Project changed from version to version. A marks actual dates.

## Version 1 (data date 2017-10-28, saved 2017-11-03, file PRD2017G09-软件工程系列课程教学辅助网站-项目计划甘特图V1.1-曾雨晴.mpp)

Note of the change: Merge branch '可控文件' of github.com:moritashin/PRD2017-09 into 可控文件

| ID | WBS | Task | Duration | Start | Finish | Predecessors | Complete |
| --- | --- | --- | --- | --- | --- | --- | --- |
| 1 | 1 | **软件工程系列课程教学辅助网站** | 154d | 2017-09-28 20:00 A | 2018-01-16 21:00 |  | 22% |
| 2 | 1.1 | **项目前期准备** | 6h | 2017-09-28 20:00 A | 2017-10-04 21:00 |  | 100% |
| 3 | 1.1.1 | **项目范围选定** | 1h | 2017-09-28 20:00 A | 2017-09-28 21:00 A |  | 100% |
| 4 |  | 类似项目案例分析 | 1h | 2017-09-28 20:00 A | 2017-09-28 21:00 A |  | 100% |
| 5 |  | 小组第一周会议（讨论项目选题和后期分配资源） | 1h | 2017-09-28 20:00 A | 2017-09-28 21:00 A | 4 | 100% |
| 6 |  | 获取项目开发硬件资源 | 5h | 2017-09-29 20:00 A | 2017-10-03 21:00 A | 3 | 100% |
| 7 |  | logo设计 | 4h | 2017-09-29 20:00 A | 2017-09-30 21:00 A | 3 | 100% |
| 8 |  | 项目选定和开发软硬件的获得 | 0d | 2017-10-03 20:00 A | 2017-10-03 20:00 A | 6 | 100% |
| 9 |  | 小组第二周第一次会议记录 | 1h | 2017-10-09 17:00 A | 2017-10-09 18:00 A |  | 100% |
| 10 |  | 小组第二周第二次会议记录 | 1h | 2017-10-13 20:00 A | 2017-10-13 21:00 A |  | 100% |
| 11 | 1.4 | **项目计划** | 32d | 2017-10-10 20:00 | 2017-10-29 21:00 | 8 | 97% |
| 12 |  | 甘特图绘制V0.1 | 4h | 2017-10-09 20:00 A | 2017-10-12 21:00 A | 2 | 100% |
| 13 |  | WBS绘制 | 2h | 2017-10-13 20:00 A | 2017-10-14 19:00 A | 12 | 100% |
| 14 |  | OBS绘制 | 2h | 2017-10-14 19:00 A | 2017-10-14 21:00 A | 13 | 100% |
| 15 |  | 风险管理 | 2h | 2017-10-13 20:00 A | 2017-10-14 19:00 A | 12 | 100% |
| 16 |  | 版本控制系统配置 | 3h | 2017-10-11 20:00 A | 2017-10-13 21:00 A | 12 | 100% |
| 17 |  | 项目计划V0.1 | 0d | 2017-10-15 20:00 A | 2017-10-15 20:00 A | 2 | 100% |
| 18 |  | 甘特图完善V0.2 | 3h | 2017-10-17 20:00 A | 2017-10-19 21:00 A | 17 | 100% |
| 19 |  | 项目计划完善V0.2 | 0h | 2017-10-20 20:00 A | 2017-10-20 20:00 A | 18 | 100% |
| 20 |  | 小组第三周第一次会议 | 1d | 2017-10-20 12:00 A | 2017-10-20 13:00 A |  | 100% |
| 21 |  | 小组第三周第二次会议 | 1d | 2017-10-20 20:00 A | 2017-10-20 21:00 A |  | 100% |
| 22 |  | 小组第四周第一次会议 | 1d | 2017-10-23 17:00 A | 2017-10-23 18:00 A |  | 100% |
| 23 |  | 质量保证计划 | 1h | 2017-10-23 20:00 A | 2017-10-23 21:00 A | 19 | 100% |
| 24 |  | 人力资源配置 | 1h | 2017-10-23 20:00 A | 2017-10-23 21:00 A | 19 | 100% |
| 25 |  | 成本预算 | 1h | 2017-10-26 20:00 A | 2017-10-26 21:00 A | 23 | 100% |
| 26 |  | 甘特图完善V1.0 | 3h | 2017-10-27 20:00 A | 2017-10-28 20:00 A | 25 | 100% |
| 27 |  | WBS、OBS修改 | 4h | 2017-10-28 20:00 A | 2017-10-29 21:00 | 26 | 75% |
| 28 |  | 项目计划完善V1.0 | 0h | 2017-10-28 20:00 A | 2017-10-28 20:00 A | 26 | 100% |
| 29 |  | 小组第四周第二次会议 | 1h | 2017-10-27 19:30 A | 2017-10-27 20:30 A |  | 100% |
| 30 |  | 项目章程 | 0h | 2017-10-27 20:00 A | 2017-10-27 20:00 A | 28 | 100% |
| 31 |  | 项目启动 | 0d | 2017-10-27 20:00 | 2017-10-27 20:00 | 30 |  |
| 32 |  | 需求工程计划-初步 | 0h | 2017-10-26 20:00 A | 2017-10-26 20:00 A | 31 | 100% |
| 33 |  | QA计划初步 | 0h | 2017-10-28 20:00 A | 2017-10-28 20:00 A | 23 | 100% |
| 34 | 1.7 | **需求工程** | 90d | 2017-10-29 20:00 | 2017-12-25 21:00 | 32 | 1% |
| 35 |  | 小组第五周第一次会议 | 1h | 2017-10-30 17:00 A | 2017-10-30 18:00 A |  | 100% |
| 36 | 1.7.2 | **需求获取活动** | 17d | 2017-10-29 20:00 | 2017-11-10 21:00 |  |  |
| 37 | 1.7.2.1 | **建立业务需求** | 8h | 2017-10-30 20:00 | 2017-11-04 21:00 |  |  |
| 38 | 1.7.2.1.1 | **定义产品愿景和项目范围** | 5h | 2017-10-30 20:00 | 2017-11-03 21:00 |  |  |
| 39 |  | 建立业务目标模型 | 1h | 2017-10-30 20:00 | 2017-10-30 21:00 | 35 |  |
| 40 |  | 干系人评审模型 | 1h | 2017-11-02 20:00 | 2017-11-02 21:00 | 39 |  |
| 41 |  | 解决业务需求冲突 | 1h | 2017-11-04 20:00 | 2017-11-04 21:00 | 40 |  |
| 42 | 1.7.2.2 | **识别用户群** | 2h | 2017-10-31 20:00 | 2017-11-01 21:00 |  |  |
| 43 |  | 选择产品代言人，记录产品代言人的期望 | 1h | 2017-10-28 20:00 | 2017-10-28 21:00 | 33 |  |
| 44 |  | 用户分类 | 1h | 2017-10-31 20:00 | 2017-10-31 21:00 | 39 |  |
| 45 |  | 识别用户类别 | 1h | 2017-11-01 20:00 | 2017-11-01 21:00 | 44 |  |
| 46 |  | 举行引导式需求获取讨论会 | 1d | 2017-11-02 20:00 | 2017-11-02 21:00 | 45 |  |
| 47 |  | QA计划 | 0h | 2017-11-02 20:00 | 2017-11-02 20:00 | 45 |  |
| 48 |  | 小组第五周第二次会议 | 0h | 2017-11-03 20:00 | 2017-11-03 21:00 | 46 |  |
| 49 |  | 组织焦点小组 | 1h | 2017-11-04 18:00 | 2017-11-04 19:00 | 48 |  |
| 50 |  | 识别用户需求 | 1d | 2017-11-04 18:00 | 2017-11-04 19:00 | 48 |  |
| 51 |  | 识别系统事件和响应 | 3h | 2017-11-04 18:00 | 2017-11-04 21:00 | 48 |  |
| 52 |  | 观察用户如何完成工作 | 4d | 2017-11-04 18:00 | 2017-11-05 19:00 | 48 |  |
| 53 |  | 分发问卷调查 | 1d | 2017-11-04 18:00 | 2017-11-04 19:00 | 48 |  |
| 54 |  | 举办需求获取访谈 | 3h | 2017-11-05 18:00 | 2017-11-05 21:00 | 51 |  |
| 55 |  | 分析文档 | 1d | 2017-11-05 18:00 | 2017-11-05 19:00 | 53 |  |
| 56 |  | 检查问题报告 | 1h | 2017-11-07 20:00 | 2017-11-07 21:00 |  |  |
| 57 |  | 重用已有的需求 | 2d | 2017-11-07 20:00 | 2017-11-08 21:00 |  |  |
| 58 |  | 学生用户代表访谈 | 2h | 2017-11-08 20:00 | 2017-11-09 21:00 |  |  |
| 59 |  | 游客用户代表访谈 | 1h | 2017-11-08 20:00 | 2017-11-08 21:00 |  |  |
| 60 |  | 教师用户代表访谈 | 1h | 2017-11-09 20:00 | 2017-11-09 21:00 |  |  |
| 61 |  | 管理员用户代表访谈 | 1h | 2017-11-08 20:00 | 2017-11-08 21:00 |  |  |
| 62 | 1.7.3 | **需求分析** | 29d | 2017-10-31 20:00 | 2017-11-18 21:00 | 36 |  |
| 63 |  | 应用环境建模（生态环境图） | 4d | 2017-10-31 20:00 | 2017-11-03 21:00 |  |  |
| 64 |  | 创建原形 | 5h | 2017-11-04 18:00 | 2017-11-05 20:00 | 48 |  |
| 65 |  | 分析可实现性 | 1d | 2017-11-05 20:00 | 2017-11-05 21:00 | 64 |  |
| 66 |  | 小组第六周第一次会议 | 1h | 2017-11-06 17:00 | 2017-11-06 18:00 |  |  |
| 67 |  | 需求工程计划-修改 | 1h | 2017-11-09 20:00 | 2017-11-09 21:00 | 61 |  |
| 68 |  | 小组第六周第二次会议 | 1h | 2017-11-10 20:00 | 2017-11-10 21:00 |  |  |
| 69 |  | 排列需求优先级 | 1d | 2017-11-11 20:00 | 2017-11-11 21:00 |  |  |
| 70 |  | 创建数据字典和ER图 | 4h | 2017-11-14 20:00 | 2017-11-17 21:00 |  |  |

| ID | WBS | Task | Duration | Start | Finish | Predecessors |
| --- | --- | --- | --- | --- | --- | --- |
| 71 |  | 小组第七周第一次会议 | 1h | 2017-11-13 17:00 | 2017-11-13 18:00 |  |
| 72 |  | 需求工程计划 | 0d | 2017-11-18 18:00 | 2017-11-18 18:00 | 67 |
| 73 | 1.7.3.11 | **需求建模** | 9d | 2017-11-11 20:00 | 2017-11-17 21:00 |  |
| 74 |  | 数据流图绘制 | 1h | 2017-11-12 20:00 | 2017-11-12 21:00 |  |
| 75 |  | 转态转移图 | 3h | 2017-11-11 20:00 | 2017-11-12 20:00 |  |
| 76 |  | 决策树 | 1h | 2017-11-12 20:00 | 2017-11-12 21:00 |  |
| 77 |  | 分析接口 | 1d | 2017-11-11 20:00 | 2017-11-11 21:00 |  |
| 78 |  | 将需求分配到子系统 | 2h | 2017-11-14 20:00 | 2017-11-15 21:00 |  |
| 79 | 1.7.4 | **规范说明** | 21h | 2017-11-16 20:00 | 2017-11-28 21:00 | 62 |
| 80 |  | 小组第七周第二次会议 | 1h | 2017-11-18 20:00 | 2017-11-18 21:00 |  |
| 81 |  | 采用需求文档模板 | 1d | 2017-11-18 20:00 | 2017-11-18 21:00 |  |
| 82 |  | 识别需求源头 | 1h | 2017-11-19 18:00 | 2017-11-19 19:00 | 81 |
| 83 |  | 为每个需求分配唯一标示 | 1h | 2017-11-19 19:00 | 2017-11-19 20:00 | 82 |
| 84 |  | 记录业务规则 | 1h | 2017-11-16 20:00 | 2017-11-16 21:00 |  |
| 85 |  | 描述非功能性需求 | 1h | 2017-11-19 20:00 | 2017-11-27 21:00 |  |
| 86 |  | 小组第八周第一次会议 | 1h | 2017-11-20 17:00 | 2017-11-20 18:00 |  |
| 87 |  | 小组第八周第二次会议 | 1h | 2017-11-24 20:00 | 2017-11-24 21:00 |  |
| 88 |  | 需求规格说明书--初步 | 0d | 2017-11-28 20:00 | 2017-11-28 20:00 | 85 |
| 89 | 1.7.5 | **需求验证** | 16d | 2017-11-27 20:00 | 2017-12-08 21:00 | 62 |
| 90 |  | 小组第九周第一次会议 | 1h | 2017-11-27 17:00 | 2017-11-27 18:00 |  |
| 91 |  | 评审需求 | 10h | 2017-11-28 20:00 | 2017-12-03 21:00 | 36 |
| 92 |  | 测试需求 | 10h | 2017-11-29 20:00 | 2017-12-04 21:00 | 36 |
| 93 |  | 定义验收条件 | 5h | 2017-11-30 20:00 | 2017-12-02 21:00 |  |
| 94 |  | 小组第九周第二次会议 | 0h | 2017-12-01 20:00 | 2017-12-01 21:00 |  |
| 95 |  | 模拟需求 | 7h | 2017-12-02 18:00 | 2017-12-04 21:00 | 93 |
| 96 |  | 小组第十周第一次会议 | 1h | 2017-12-04 17:00 | 2017-12-04 18:00 |  |
| 97 |  | 软件需求规格说书 | 0d | 2017-11-28 20:00 | 2017-11-28 20:00 | 88 |
| 98 |  | 小组第十周第二次会议 | 1h | 2017-12-08 20:00 | 2017-12-08 21:00 |  |
| 99 | 1.7.6 | **需求管理** | 28h | 2017-12-11 20:00 | 2017-12-30 21:00 | 89 |
| 100 |  | 小组第十一周第一次会议 | 1h | 2017-12-11 17:00 | 2017-12-11 18:00 |  |
| 101 |  | 建立变更控制流程 | 3h | 2017-12-12 20:00 | 2017-12-14 21:00 |  |
| 102 |  | 建立基线、管理需求版本 | 3h | 2017-12-18 20:00 | 2017-12-20 21:00 | 101FS+7h |
| 103 |  | 分析变更影响 | 3h | 2017-12-12 20:00 | 2017-12-14 21:00 |  |
| 104 |  | 小组第十一周第二次会议 | 1h | 2017-12-15 20:00 | 2017-12-15 21:00 |  |
| 105 |  | 维护变更历史 | 4h | 2017-12-18 20:00 | 2017-12-21 21:00 |  |
| 106 |  | 小组第十二周第一次会议 | 1h | 2017-12-17 17:00 | 2017-12-17 18:00 |  |
| 107 |  | 跟踪需求状态 | 5h | 2017-12-17 20:00 | 2017-12-21 21:00 |  |
| 108 |  | 跟踪需求问题 | 4h | 2017-12-18 20:00 | 2017-12-21 21:00 |  |
| 109 |  | 维护需求可跟踪矩阵 | 2h | 2017-12-19 20:00 | 2017-12-20 21:00 |  |
| 110 |  | 小组第十二周第二次会议 | 1h | 2017-12-22 20:00 | 2017-12-22 21:00 |  |
| 111 |  | 使用需求管理工具 | 4h | 2017-12-23 20:00 | 2017-12-24 21:00 |  |
| 112 |  | 软件需求变更文档 | 0d | 2017-12-25 20:00 | 2017-12-25 20:00 | 111 |
| 113 |  | 小组第十三周第一次会议 | 1h | 2017-12-25 17:00 | 2017-12-25 18:00 |  |
| 114 |  | 软件需求变更文档修改 | 1h | 2017-12-27 20:00 | 2017-12-27 21:00 | 97FS+45h |
| 115 | 1.8 | **概要设计** | 18d | 2017-12-25 20:00 | 2018-01-10 21:00 | 32 |
| 116 |  | 方案选择 | 1h | 2017-12-26 20:00 | 2017-12-26 21:00 |  |
| 117 |  | 功能分解（IPO图）绘制 | 3h | 2017-12-26 20:00 | 2017-12-28 21:00 |  |
| 118 |  | 软件结构设计 | 3h | 2018-01-02 20:00 | 2018-01-04 21:00 |  |
| 119 |  | 小组第十三周第二次会议 | 1h | 2017-12-29 20:00 | 2017-12-29 21:00 |  |
| 120 |  | 数据库设计 | 2h | 2018-01-02 20:00 | 2018-01-03 21:00 |  |
| 121 |  | 小组第十四周第一次会议 | 1h | 2018-01-05 20:00 | 2018-01-05 21:00 |  |
| 122 |  | 系统设计与实现计划 | 0h | 2018-01-07 20:00 | 2018-01-07 20:00 | 114FS+11h |
| 123 |  | 软件概要设计说明--初步 | 0h | 2018-01-08 20:00 | 2018-01-08 20:00 | 119FS+8h |
| 124 |  | 软件概要设计说明--修改 | 5h | 2018-01-08 18:00 | 2018-01-10 21:00 |  |
| 125 |  | 软件概要设计说明 | 0d | 2018-01-08 20:00 | 2018-01-08 20:00 |  |
| 126 |  | 编码实现 | 1d | 2018-01-11 20:00 | 2018-01-11 21:00 | 115 |
| 127 | 1.10 | **系统测试** | 4d | 2018-01-12 20:00 | 2018-01-13 21:00 | 126 |
| 128 |  | 单元测试 | 1d | 2018-01-12 20:00 | 2018-01-12 21:00 |  |
| 129 |  | 黑白盒测试 | 1d | 2018-01-12 20:00 | 2018-01-12 21:00 |  |
| 130 |  | 集成测试 | 1d | 2018-01-13 20:00 | 2018-01-13 21:00 |  |
| 131 |  | 测试计划 | 0h | 2018-01-13 20:00 | 2018-01-13 20:00 |  |
| 132 | 1.11 | **安装部署计划** | 1d | 2018-01-14 20:00 | 2018-01-14 21:00 | 127 |
| 133 |  | 安装部署计划报告 | 0d | 2018-01-14 20:00 | 2018-01-14 20:00 |  |
| 134 | 1.12 | **系统维护** | 1d | 2018-01-15 20:00 | 2018-01-15 21:00 | 132 |
| 135 |  | 系统维护报告 | 0d | 2018-01-15 20:00 | 2018-01-15 20:00 |  |
| 136 | 1.13 | **项目总结** | 9d | 2018-01-11 20:00 | 2018-01-15 21:00 | 115 |
| 137 |  | 项目分析 | 1d | 2018-01-11 20:00 | 2018-01-11 21:00 | 115 |
| 138 |  | 总结ppt | 1d | 2018-01-12 20:00 | 2018-01-12 21:00 | 137 |
| 139 |  | 项目总结报告 | 0h | 2018-01-14 20:00 | 2018-01-14 20:00 |  |

## Version 2 (data date 2017-10-28, saved 2017-11-11, file PRD2017G09-软件工程系列课程教学辅助网站-项目计划甘特图V1.3-曾雨晴.mpp)

Note of the change: [11.12]现有文档更新

Last finish stays 2018-01-16. Complete tasks 28 → 45.

Added:

| ID | Task | Duration | Start | Finish | Predecessors | Resources |
| --- | --- | --- | --- | --- | --- | --- |
| 41 | 项目愿景与范围文档 | 0d | 2017-10-28 20:00 | 2017-10-28 20:00 | 33 | 曾雨晴; 奕吉 |
| 50 | 相关文档修改 | 1d | 2017-11-05 20:00 | 2017-11-05 21:00 |  | 曾雨晴; 靳泽旭; 奕吉; 于欣汝; 张旗 |
| 72 | 相关文档修改、绘制uml图 | 1d | 2017-11-12 20:00 | 2017-11-12 21:00 |  | 曾雨晴; 靳泽旭; 奕吉; 于欣汝; 张旗 |

Changed:

| ID | Task | Start | Finish | Complete | Predecessors |
| --- | --- | --- | --- | --- | --- |
| 1 | **软件工程系列课程教学辅助网站** |  |  | 22% → 34% |  |
| 34 | **需求工程** |  |  | 1% → 20% |  |
| 36 | **需求获取活动** |  |  | 0% → 65% |  |
| 37 | **建立业务需求** |  |  | 0% → 33% |  |
| 42 | 解决业务需求冲突 | 2017-11-04 20:00 A | 2017-11-04 21:00 A | 0% → 100% |  |
| 43 | **识别用户群** |  | 2017-11-01 21:00 A | 0% → 100% | none → 41 |
| 44 | 选择产品代言人，记录产品代言人的期望 | 2017-10-28 20:00 A | 2017-10-28 21:00 A | 0% → 100% |  |
| 45 | 用户分类 | 2017-10-31 20:00 A | 2017-10-31 21:00 A | 0% → 100% |  |
| 46 | 识别用户类别 | 2017-11-01 20:00 A | 2017-11-01 21:00 A | 0% → 100% |  |
| 47 | 举行引导式需求获取讨论会 | 2017-11-02 20:00 A | 2017-11-02 21:00 A | 0% → 100% |  |
| 48 | QA计划 | 2017-11-02 20:00 A | 2017-11-02 20:00 A | 0% → 100% |  |
| 49 | 小组第五周第二次会议 | 2017-11-03 20:00 A | 2017-11-03 21:00 A | 0% → 100% |  |
| 51 | 组织焦点小组 | 2017-11-04 18:00 A | 2017-11-04 19:00 A | 0% → 100% |  |
| 52 | 识别用户需求 | 2017-11-04 18:00 A | 2017-11-04 19:00 A | 0% → 100% |  |
| 53 | 识别系统事件和响应 | 2017-11-04 18:00 A | 2017-11-04 21:00 A | 0% → 100% |  |
| 54 | 观察用户如何完成工作 | 2017-11-04 18:00 A | 2017-11-05 19:00 A | 0% → 100% |  |
| 55 | 分发问卷调查 | 2017-11-04 18:00 A | 2017-11-04 19:00 A | 0% → 100% |  |
| 56 | 举办需求获取访谈 | 2017-11-05 18:00 A | 2017-11-05 21:00 A | 0% → 100% |  |
| 57 | 分析文档 | 2017-11-05 18:00 A | 2017-11-05 19:00 A | 0% → 100% |  |
| 64 | **需求分析** | 2017-10-31 20:00 A |  | 0% → 21% |  |
| 65 | 应用环境建模（生态环境图） | 2017-10-31 20:00 A | 2017-11-03 21:00 A | 0% → 100% |  |
| 68 | 小组第六周第一次会议 | 2017-11-06 17:00 A | 2017-11-06 18:00 A | 0% → 100% |  |
| 70 | 小组第六周第二次会议 | 2017-11-10 20:00 A | 2017-11-10 21:00 A | 0% → 100% |  |

## Version 3 (data date 2017-10-28, saved 2017-11-18, file PRD2017G09-软件工程系列课程教学辅助网站-项目计划甘特图V1.4-曾雨晴.mpp)

Note of the change: 提交新的一周甘特图

Last finish stays 2018-01-16. Complete tasks 45 → 46.

Changed:

| ID | Task | Start | Finish | Duration | Complete | Other |
| --- | --- | --- | --- | --- | --- | --- |
| 1 | **软件工程系列课程教学辅助网站** |  |  |  | 34% → 35% |  |
| 36 | **需求获取活动** |  | 2017-11-10 21:00 → 2017-11-27 21:00 (+17d) | 17d → 46d | 65% → 68% |  |
| 59 | 重用已有的需求 |  |  |  |  | resources 靳泽旭 → 张旗 |
| 60 | 学生用户代表访谈 | 2017-11-08 20:00 → 2017-11-18 20:00 (+10d) | 2017-11-09 21:00 → 2017-11-19 19:00 (+10d) |  |  | resources 于欣汝 → 靳泽旭 |
| 61 | 游客用户代表访谈 | 2017-11-08 20:00 → 2017-11-18 20:00 (+10d) | 2017-11-08 21:00 → 2017-11-18 21:00 (+10d) |  |  | resources 张旗 → 靳泽旭 |
| 62 | 教师用户代表访谈 | 2017-11-09 20:00 → 2017-11-27 20:00 A (+18d) | 2017-11-09 21:00 → 2017-11-27 21:00 A (+18d) |  | 0% → 100% | resources 曾雨晴 → 奕吉 |
| 63 | 管理员用户代表访谈 |  |  |  |  | resources 奕吉 → 曾雨晴 |

## Version 4 (data date 2017-10-28, saved 2017-11-28, file PRD2017G09-软件工程系列课程教学辅助网站-项目计划甘特图V1.7.mpp)

Note of the change: 提交两份开发计划V1.4，QA计划V0.4，愿景V0.5，甘特图V1.6，WBSV1.6，添加网站结构思维导图，界面原型初步

Last finish stays 2018-01-16. Complete tasks 46 → 63.

Added:

| ID | Task | Duration | Start | Finish | Resources |
| --- | --- | --- | --- | --- | --- |
| 20 | 项目第一次与下达者访谈 | 1d | 2017-10-20 20:00 A | 2017-10-20 21:00 A | 曾雨晴; 靳泽旭; 奕吉; 于欣汝; 张旗 |
| 59 | 项目第二次与项目下达者访谈 | 1d | 2017-11-06 20:00 A | 2017-11-06 21:00 A | 曾雨晴; 靳泽旭; 奕吉; 于欣汝; 张旗 |
| 67 | 绘制管理员用例图 | 2d | 2017-11-05 20:00 A | 2017-11-06 21:00 A | 曾雨晴 |
| 68 | 绘制部分初步定义类图 | 2d | 2017-11-05 20:00 A | 2017-11-06 21:00 A | 靳泽旭 |
| 69 | 绘制部分系统状态图、部署图 | 1d | 2017-11-04 20:00 A | 2017-11-04 21:00 A | 奕吉 |
| 70 | 绘制部分初步定义顺序图、协作图 | 1d | 2017-11-05 20:00 A | 2017-11-05 21:00 A | 曾雨晴 |
| 71 | 绘制部分初步定义用例图 | 1d | 2017-11-05 20:00 A | 2017-11-05 21:00 A | 张旗 |
| 73 | 创建平台端界面原型 | 4d | 2017-11-25 20:00 | 2017-11-26 21:00 | 于欣汝 |
| 75 | 项目第一次与教师用户代表访谈 | 1d | 2017-11-27 20:00 A | 2017-11-27 21:00 A | 曾雨晴; 靳泽旭; 奕吉; 于欣汝; 张旗 |
| 99 | 项目第一次管理员用户代表访谈 | 1d | 2017-11-24 20:00 A | 2017-11-24 21:00 A | 曾雨晴; 靳泽旭; 奕吉; 于欣汝; 张旗 |

Removed: 59 重用已有的需求

Changed:

| ID | Task | Start | Finish | Duration | Complete | Predecessors | Other |
| --- | --- | --- | --- | --- | --- | --- | --- |
| 1 | **软件工程系列课程教学辅助网站** |  |  |  | 35% → 42% |  |  |
| 35 | **需求工程** |  |  |  | 20% → 31% |  |  |
| 37 | **需求获取活动** |  |  |  | 68% → 90% |  |  |
| 51 | 相关文档修改 | 2017-11-05 20:00 A | 2017-11-05 21:00 A |  | 0% → 100% |  |  |
| 61 | 学生用户代表访谈 | 2017-11-18 20:00 A | 2017-11-19 19:00 A |  | 0% → 100% |  |  |
| 62 | 游客用户代表访谈 | 2017-11-18 20:00 A | 2017-11-18 21:00 A |  | 0% → 100% |  |  |
| 64 | 管理员用户代表第一次访谈 | 2017-11-08 20:00 → 2017-11-24 20:00 A (+16d) | 2017-11-08 21:00 → 2017-11-24 21:00 A (+16d) |  | 0% → 100% |  | was named 管理员用户代表访谈; resources 曾雨晴 → 曾雨晴; 靳泽旭; 奕吉; 于欣汝; 张旗 |
| 65 | **需求分析** |  | 2017-11-18 21:00 → 2017-11-28 21:00 (+10d) | 29d → 45d | 21% → 38% |  |  |
| 66 | **应用环境建模（生态环境图）** |  | 2017-11-03 21:00 A → 2017-11-06 21:00 A (+3d) | 4d → 11d |  |  |  |
| 72 | 创建移动端界面原型 | 2017-11-04 18:00 → 2017-11-25 20:00 A (+21d) | 2017-11-05 20:00 → 2017-11-25 21:00 A (+20d) | 5h → 1h | 0% → 100% |  | was named 创建原形; resources 靳泽旭 [20%]; 于欣汝 [80%] → 靳泽旭 |
| 74 | 分析可实现性 | 2017-11-05 20:00 → 2017-11-26 18:00 (+21d) | 2017-11-05 21:00 → 2017-11-26 19:00 (+21d) |  |  | 72 → 66, 72 |  |
| 82 | 小组第七周第一次会议 | 2017-11-13 17:00 A | 2017-11-13 18:00 A |  | 0% → 100% |  |  |
| 90 | **规范说明** | 2017-11-16 20:00 A |  |  | 0% → 44% |  |  |
| 91 | 小组第七周第二次会议 | 2017-11-18 20:00 A | 2017-11-18 21:00 A |  | 0% → 100% |  |  |
| 97 | 小组第八周第一次会议 | 2017-11-20 17:00 A | 2017-11-20 18:00 A |  | 0% → 100% |  |  |
| 98 | 小组第八周第二次会议 | 2017-11-24 20:00 A | 2017-11-24 21:00 A |  | 0% → 100% |  |  |

## Version 5 (data date 2017-10-28, saved 2018-01-05, file PRD2017G09-软件工程系列课程教学辅助网站-项目计划甘特图V1.9.4.mpp)

Note of the change: 提交两份项目计划V1.6.4，两份甘特图V1.9.4

Last finish stays 2018-01-16. Complete tasks 63 → 85.

Added:

| ID | Task | Duration | Start | Finish | Predecessors | Resources |
| --- | --- | --- | --- | --- | --- | --- |
| 107 | 教师用户界面设计与实现 | 3d | 2017-12-05 20:00 | 2017-12-07 21:00 |  | 于欣汝 |
| 111 | 管理员用户用例表设计 | 1d | 2017-12-09 20:00 | 2017-12-09 21:00 |  | 曾雨晴 |
| 112 | 教师、学生用户用例表设计 | 1d | 2017-12-09 20:00 | 2017-12-09 21:00 |  | 奕吉 |
| 113 | SRS初步 | 0d | 2017-12-10 20:00 | 2017-12-10 20:00 | 83 | 奕吉 |
| 119 | 与管理员用户代表第二次访谈 | 1d | 2017-12-15 20:00 A | 2017-12-15 21:00 A |  | 曾雨晴; 靳泽旭; 奕吉; 于欣汝; 张旗 |
| 120 | 管理员用例改进 | 1d | 2017-12-16 18:00 | 2017-12-16 19:00 | 119 | 曾雨晴; 靳泽旭 |
| 121 | 教师、学生用例改进 | 1d | 2017-12-16 18:00 | 2017-12-16 19:00 | 119 | 奕吉; 于欣汝 |
| 122 | 数据字典、er图改进 | 1d | 2017-12-16 18:00 | 2017-12-16 19:00 | 119 | 张旗 |
| 123 | 教师、学生、游客用户界面改进 | 1d | 2017-12-17 20:00 | 2017-12-17 21:00 |  | 于欣汝 |
| 124 | 管理员用户界面改进 | 1d | 2017-12-17 20:00 | 2017-12-17 21:00 |  | 靳泽旭 |
| 125 | SRS正式版第一版 | 0d | 2017-12-17 20:00 A | 2017-12-17 20:00 A | 113 | 曾雨晴; 靳泽旭; 奕吉; 于欣汝; 张旗 |
| 130 | JAD会议 | 1d | 2017-12-18 20:00 A | 2017-12-18 21:00 A |  | 曾雨晴; 靳泽旭; 奕吉; 于欣汝; 张旗 |
| 131 | SRS内部评审 | 1d | 2017-12-18 20:00 A | 2017-12-18 21:00 A |  | 曾雨晴; 靳泽旭; 奕吉; 于欣汝; 张旗 |
| 135 | 定义项目相关术语 | 1d | 2017-12-22 20:00 A | 2017-12-22 21:00 A |  | 曾雨晴; 靳泽旭; 奕吉; 于欣汝; 张旗 |
| 136 | 根据评审内容修改数据字典 | 1d | 2017-12-23 20:00 | 2017-12-23 21:00 |  | 张旗 |
| 137 | 根据评审内容修改管理员相关内容 | 1d | 2017-12-23 20:00 | 2017-12-23 21:00 |  | 曾雨晴; 靳泽旭 |
| 138 | 根据评审内容修改教师、学生相关内容 | 1d | 2017-12-23 20:00 | 2017-12-23 21:00 |  | 奕吉 |
| 139 | 根据评审内容修改主界面 | 1d | 2017-12-23 20:00 | 2017-12-23 21:00 |  | 于欣汝 |
| 142 | 修改各自负责文档 | 1d | 2017-12-30 20:00 A | 2017-12-30 21:00 A |  | 曾雨晴; 靳泽旭; 奕吉; 于欣汝; 张旗 |

Removed: 109 软件需求规格说书; 126 软件需求变更文档修改; 131 小组第十三周第二次会议

Changed:

| ID | Task | Start | Finish | Duration | Complete | Predecessors | Other |
| --- | --- | --- | --- | --- | --- | --- | --- |
| 1 | **软件工程系列课程教学辅助网站** |  |  |  | 42% → 54% |  |  |
| 35 | **需求工程** |  |  |  | 31% → 46% |  |  |
| 37 | **需求获取活动** |  | 2017-11-27 21:00 A |  | 90% → 100% |  |  |
| 38 | **建立业务需求** |  | 2017-11-04 21:00 A |  | 33% → 100% |  |  |
| 39 | **定义产品愿景和项目范围** |  |  |  | 0% → 100% |  |  |
| 40 | 建立业务目标模型 | 2017-10-30 20:00 A | 2017-10-30 21:00 A |  | 0% → 100% |  |  |
| 41 | 干系人评审模型 | 2017-11-02 20:00 A | 2017-11-02 21:00 → 2017-11-02 20:00 A | 1h → 0h | 0% → 100% |  |  |
| 42 | 项目愿景与范围文档 | 2017-10-28 20:00 A | 2017-10-28 20:00 A |  | 0% → 100% |  |  |
| 60 | 检查问题报告 | 2017-11-07 20:00 A | 2017-11-07 21:00 A |  | 0% → 100% |  |  |
| 65 | **需求分析** |  | 2017-11-28 21:00 → 2017-12-12 21:00 (+14d) | 45d → 67d | 38% → 44% |  |  |
| 66 | **应用环境建模（生态环境图）** | 2017-10-31 20:00 A → 2017-10-31 20:00 | 2017-11-06 21:00 A → 2017-12-12 21:00 (+36d) | 11d → 67d |  |  | resources 奕吉 [50%]; 曾雨晴 [50%] → none |
| 72 | 创建管理员界面原型 |  | 2017-11-25 21:00 A → 2017-11-25 21:00 |  | 100% → 0% |  | was named 创建移动端界面原型 |
| 73 | 创建教师、学生、游客界面原型 |  |  |  |  |  | was named 创建平台端界面原型 |
| 74 | 分析可实现性 | 2017-11-26 18:00 A | 2017-11-26 19:00 → 2017-11-26 21:00 A | 1d → 3d | 0% → 100% |  |  |
| 79 | 排列需求优先级 | 2017-11-11 20:00 → 2017-12-12 20:00 (+31d) | 2017-11-11 21:00 → 2017-12-12 21:00 (+31d) |  |  |  |  |
| 80 | 相关文档修改、绘制uml图 | 2017-11-12 20:00 A | 2017-11-12 21:00 A |  | 0% → 100% |  |  |
| 83 | 需求工程计划 | 2017-11-18 18:00 → 2017-11-10 20:00 (-8d) | 2017-11-18 18:00 → 2017-11-10 20:00 (-8d) |  |  |  |  |
| 101 | **需求验证** |  | 2017-12-08 21:00 → 2017-12-17 21:00 (+9d) | 16d → 33d | 0% → 10% |  |  |
| 102 | 小组第九周第一次会议 | 2017-11-27 17:00 A | 2017-11-27 18:00 A |  | 0% → 100% |  |  |
| 106 | 小组第九周第二次会议 | 2017-12-01 20:00 A | 2017-12-01 21:00 A |  | 0% → 100% |  |  |
| 108 | 管理员用户界面设计与实现 |  |  |  |  |  | was named 模拟需求 |
| 109 | 小组第十周第一次会议 | 2017-12-04 17:00 A | 2017-12-04 18:00 A |  | 0% → 100% |  |  |
| 110 | 小组第十周第二次会议 | 2017-12-08 20:00 A | 2017-12-08 21:00 A |  | 0% → 100% |  |  |
| 114 | **需求管理** | 2017-12-11 20:00 A | 2017-12-30 21:00 → 2018-01-07 21:00 (+8d) | 28h → 37h | 0% → 44% |  |  |
| 115 | 小组第十一周第一次会议 | 2017-12-11 17:00 → 2017-12-11 20:00 A | 2017-12-11 18:00 → 2017-12-11 21:00 A |  | 0% → 100% |  |  |
| 117 | 建立基线、管理需求版本 | 2017-12-18 20:00 A | 2017-12-20 21:00 A |  | 0% → 100% |  |  |
| 118 | 分析变更影响 | 2017-12-12 20:00 → 2017-12-13 20:00 (+1d) |  | 3h → 2h |  |  |  |
| 126 | 小组第十一周第二次会议 | 2017-12-15 20:00 A | 2017-12-15 21:00 A |  | 0% → 100% |  |  |
| 127 | 维护变更历史 | 2017-12-18 20:00 → 2017-12-20 20:00 (+2d) | 2017-12-21 21:00 → 2017-12-20 21:00 (-1d) | 4h → 1h |  |  |  |
| 128 | 小组第十二周第一次会议 | 2017-12-17 17:00 → 2017-12-18 20:00 A (+1d) | 2017-12-17 18:00 → 2017-12-18 21:00 A (+1d) |  | 0% → 100% |  |  |
| 129 | 跟踪需求状态 | 2017-12-17 20:00 A | 2017-12-21 21:00 A |  | 0% → 100% |  |  |
| 132 | 跟踪需求问题 | 2017-12-18 20:00 → 2017-12-19 20:00 (+1d) | 2017-12-21 21:00 → 2017-12-20 21:00 (-1d) | 4h → 2h |  |  |  |
| 134 | 小组第十二周第二次会议 | 2017-12-22 20:00 A | 2017-12-22 21:00 A |  | 0% → 100% |  |  |
| 141 | 小组第十三周第一次会议 | 2017-12-25 17:00 A | 2017-12-25 18:00 A |  | 0% → 100% |  |  |
| 143 | 软件需求变更文档 | 2017-12-25 20:00 → 2018-01-05 20:00 (+11d) | 2017-12-25 20:00 → 2018-01-05 20:00 (+11d) |  |  | 140 → 125 |  |
| 145 | 方案选择 | 2017-12-26 20:00 → 2018-01-02 20:00 (+7d) | 2017-12-26 21:00 → 2018-01-02 21:00 (+7d) |  |  |  |  |
| 146 | 功能分解（IPO图）绘制 | 2017-12-26 20:00 → 2018-01-02 20:00 (+7d) | 2017-12-28 21:00 → 2018-01-02 21:00 (+5d) | 3h → 1h |  |  |  |
| 147 | 软件结构设计 | 2018-01-02 20:00 → 2018-01-03 20:00 (+1d) | 2018-01-04 21:00 → 2018-01-03 21:00 (-1d) | 3h → 1h |  |  |  |
| 150 | 系统设计与实现计划 | 2018-01-07 20:00 → 2018-01-06 20:00 (-1d) | 2018-01-07 20:00 → 2018-01-06 20:00 (-1d) |  |  | 软件需求变更文档修改FS+11h → 143 |  |
| 151 | 软件概要设计说明--初步 | 2018-01-08 20:00 → 2018-01-06 20:00 (-2d) | 2018-01-08 20:00 → 2018-01-06 20:00 (-2d) |  |  | 小组第十三周第二次会议FS+8h → 150 |  |
| 152 | 软件概要设计说明--修改 | 2018-01-08 18:00 → 2018-01-06 20:00 (-2d) | 2018-01-10 21:00 → 2018-01-06 20:00 (-4d) | 5h → 0h |  | none → 151 |  |
| 153 | 软件概要设计说明 | 2018-01-08 20:00 → 2018-01-07 20:00 (-1d) | 2018-01-08 20:00 → 2018-01-07 20:00 (-1d) |  |  | none → 152 |  |
| 159 | 测试计划 | 2018-01-13 20:00 → 2018-01-06 20:00 (-7d) | 2018-01-13 20:00 → 2018-01-06 20:00 (-7d) |  |  | none → 153 |  |
| 161 | 安装部署计划报告 | 2018-01-14 20:00 → 2018-01-06 20:00 (-8d) | 2018-01-14 20:00 → 2018-01-06 20:00 (-8d) |  |  | none → 159 |  |
| 163 | 系统维护报告 | 2018-01-15 20:00 → 2018-01-06 20:00 (-9d) | 2018-01-15 20:00 → 2018-01-06 20:00 (-9d) |  |  | none → 161 |  |
| 167 | 项目总结报告 | 2018-01-14 20:00 → 2018-01-13 18:00 (-1d) | 2018-01-14 20:00 → 2018-01-13 18:00 (-1d) |  |  | none → 166 |  |

## Version 6 (data date 2017-10-28, saved 2018-01-17, file PRD2017G09-软件工程系列课程教学辅助网站-项目计划甘特图.mpp)

Note of the change: 在项目收尾阶段对文档进行整理

Last finish 2018-01-16 → 2018-01-17 (+1d). Complete tasks 85 → 144.

Added:

| ID | Task | Duration | Start | Finish | Predecessors | Resources |
| --- | --- | --- | --- | --- | --- | --- |
| 10 | 可行性分析 | 0d | 2017-10-09 20:00 | 2017-10-09 20:00 | 2 |  |
| 29 | wbs修改 | 1d | 2017-10-28 20:00 A | 2017-10-28 21:00 A | 14 | 曾雨晴 |
| 58 | 用户界面初次设定 | 4d | 2017-11-04 20:00 A | 2017-11-05 21:00 A |  | 于欣汝 |
| 60 | 移动端界面试做 | 1d | 2017-11-05 20:00 A | 2017-11-05 21:00 A |  | 靳泽旭 |
| 111 | 管理员测试用例设计 | 1d | 2017-12-09 20:00 A | 2017-12-09 21:00 A |  | 曾雨晴 |
| 112 | 教师、学生用户测试用例设计 | 1d | 2017-12-09 20:00 A | 2017-12-09 21:00 A |  | 奕吉 |
| 115 | 与教师用户第二次访谈 | 1d | 2017-12-12 20:00 A | 2017-12-12 21:00 A |  | 曾雨晴; 靳泽旭; 奕吉; 于欣汝; 张旗 |
| 123 | SRS初始版本修订 | 0d | 2017-12-17 20:00 A | 2017-12-17 20:00 A | 113 | 曾雨晴; 靳泽旭; 奕吉; 于欣汝; 张旗 |
| 128 | SRS正式版 | 0d | 2017-12-26 20:00 A | 2017-12-26 20:00 A | 126 |  |
| 132 | CCB章程 | 1d | 2017-12-26 20:00 A | 2017-12-26 21:00 A | 128 | 奕吉 |
| 135 | 提交需求变更报告 | 1d | 2017-12-30 20:00 A | 2017-12-30 21:00 A |  | 于欣汝 |
| 142 | 需求变更内部评审 | 1d | 2018-01-05 20:00 A | 2018-01-05 21:00 A | 132 | 曾雨晴; 靳泽旭; 奕吉; 于欣汝; 张旗 |
| 165 | 组内内部评审 | 1d | 2018-01-14 20:00 A | 2018-01-14 21:00 A |  | 曾雨晴; 靳泽旭; 奕吉; 于欣汝; 张旗 |

Removed: 32 项目启动; 55 观察用户如何完成工作; 85 数据流图绘制; 86 转态转移图; 87 决策树; 100 需求规格说明书--初步; 125 SRS正式版第一版; 151 软件概要设计说明--初步; 152 软件概要设计说明--修改; 156 单元测试; 157 黑白盒测试; 158 集成测试

Changed:

| ID | Task | Start | Finish | Duration | Complete | Predecessors | Other |
| --- | --- | --- | --- | --- | --- | --- | --- |
| 1 | **软件工程系列课程教学辅助网站** |  | 2018-01-16 21:00 → 2018-01-17 21:00 (+1d) | 154d → 155d | 54% → 99% |  |  |
| 8 | 项目选定和开发软硬件的获得 |  | 2017-10-03 20:00 A → 2017-10-03 21:00 A | 0d → 1h |  |  |  |
| 11 | **项目计划** | 2017-10-10 20:00 → 2017-10-09 20:00 A (-1d) |  | 32d → 33d |  |  |  |
| 12 | 甘特图绘制 |  |  |  |  |  | was named 甘特图绘制V0.1 |
| 18 | 项目计划初步 |  | 2017-10-15 20:00 A → 2017-10-15 21:00 | 0d → 1h | 100% → 0% | 2 → 10 | was named 项目计划V0.1 |
| 19 | 甘特图完善 |  |  |  |  | 18 → 12 | was named 甘特图完善V0.2 |
| 20 | 项目计划完善 |  | 2017-10-20 20:00 A → 2017-10-20 21:00 A | 0h → 1h |  | 19 → 18 | was named 项目计划完善V0.2 |
| 28 | 甘特图完善正式版 |  |  |  |  |  | was named 甘特图完善V1.0 |
| 30 | OBS修改 |  | 2017-10-29 21:00 → 2017-10-28 21:00 A (-1d) | 4h → 1h | 75% → 100% | 28 → 15 | was named WBS、OBS修改; resources 曾雨晴 [20%]; 靳泽旭 [80%] → 靳泽旭 [80%] |
| 31 | 项目计划正式版 |  |  |  |  | 28 → 20 | was named 项目计划完善V1.0 |
| 34 | 需求工程计划-初步 |  |  |  |  | 项目启动 → 33 |  |
| 36 | **需求工程** |  |  |  | 46% → 100% |  |  |
| 39 | **建立业务需求** | 2017-10-30 20:00 A | 2017-11-04 21:00 A → 2017-11-04 21:00 |  |  |  |  |
| 40 | **定义产品愿景和项目范围** | 2017-10-30 20:00 A |  |  |  |  |  |
| 42 | **识别用户群** | 2017-10-31 20:00 → 2017-10-28 20:00 A (-3d) |  | 2h → 7h |  |  |  |
| 47 | 干系人评审模型 |  | 2017-11-02 20:00 A → 2017-11-02 21:00 A | 0h → 1h |  |  |  |
| 48 | QA计划正式版 |  |  |  |  | 45 → 35 | was named QA计划 |
| 50 | 项目愿景与范围文档 | 2017-10-28 20:00 A → 2017-11-03 20:00 A (+6d) | 2017-10-28 20:00 A → 2017-11-03 20:00 A (+6d) |  |  |  |  |
| 51 | 解决业务需求冲突 |  |  |  |  | 47 → 48 |  |
| 59 | 相关文档修改 |  |  |  |  | none → 50 |  |
| 67 | **需求分析** | 2017-10-31 20:00 A → 2017-11-04 20:00 A (+4d) | 2017-12-12 21:00 A | 67d → 61d | 44% → 100% |  |  |
| 68 | **应用环境建模（生态环境图）** | 2017-10-31 20:00 → 2017-11-04 20:00 A (+4d) | 2017-12-12 21:00 → 2017-11-06 21:00 A (-36d) | 67d → 5d |  |  |  |
| 74 | 创建管理员界面原型 |  | 2017-11-25 21:00 A |  | 0% → 100% |  |  |
| 75 | 创建教师、学生、游客界面原型 | 2017-11-25 20:00 A | 2017-11-26 21:00 A |  | 0% → 100% |  |  |
| 76 | 分析可实现性 |  |  |  |  | 68, 74 → 68 | resources 奕吉 → 奕吉; 曾雨晴 |
| 79 | 需求工程计划-修改 | 2017-11-09 20:00 A | 2017-11-09 21:00 A |  | 0% → 100% | 66 → 77 |  |
| 81 | 排列需求优先级 | 2017-12-12 20:00 A | 2017-12-12 21:00 A |  | 0% → 100% |  |  |
| 83 | 创建数据字典和ER图 | 2017-11-14 20:00 A | 2017-11-17 21:00 A |  | 0% → 100% |  |  |
| 85 | 需求工程计划 | 2017-11-10 20:00 A | 2017-11-10 20:00 A |  | 0% → 100% |  |  |
| 86 | 需求建模 | 2017-11-11 20:00 A | 2017-11-17 21:00 A |  | 0% → 100% |  |  |
| 87 | 分析接口 | 2017-11-11 20:00 A | 2017-11-11 21:00 A |  | 0% → 100% |  |  |
| 88 | 将需求分配到子系统 | 2017-11-14 20:00 A | 2017-11-15 21:00 A |  | 0% → 100% |  |  |
| 89 | **规范说明** |  |  |  | 44% → 100% |  |  |
| 91 | 采用需求文档模板 | 2017-11-18 20:00 A | 2017-11-18 21:00 A |  | 0% → 100% |  |  |
| 92 | 识别需求源头 | 2017-11-19 18:00 A | 2017-11-19 19:00 A |  | 0% → 100% |  |  |
| 93 | 为每个需求分配唯一标示 | 2017-11-19 19:00 A | 2017-11-19 20:00 A |  | 0% → 100% |  |  |
| 94 | 记录业务规则 | 2017-11-16 20:00 A | 2017-11-16 21:00 A |  | 0% → 100% |  |  |
| 95 | 描述非功能性需求 | 2017-11-19 20:00 A | 2017-11-27 21:00 A |  | 0% → 100% |  |  |
| 99 | **需求验证** |  | 2017-12-17 21:00 → 2017-12-26 21:00 (+9d) | 33d → 46d | 10% → 100% |  |  |
| 101 | 评审需求 | 2017-11-28 20:00 A | 2017-12-03 21:00 A |  | 0% → 100% |  |  |
| 102 | 测试需求 | 2017-11-29 20:00 A | 2017-12-04 21:00 A |  | 0% → 100% |  |  |
| 103 | 定义验收条件 | 2017-11-30 20:00 A | 2017-12-02 21:00 A |  | 0% → 100% |  |  |
| 105 | 教师用户界面设计与实现 | 2017-12-05 20:00 A | 2017-12-07 21:00 A |  | 0% → 100% |  |  |
| 106 | 管理员用户界面设计与实现 | 2017-12-02 18:00 A | 2017-12-04 21:00 A |  | 0% → 100% |  |  |
| 109 | 管理员用户用例表设计 | 2017-12-09 20:00 A | 2017-12-09 21:00 A |  | 0% → 100% |  |  |
| 110 | 教师、学生用户用例表设计 | 2017-12-09 20:00 A | 2017-12-09 21:00 A |  | 0% → 100% |  |  |
| 113 | SRS初步 | 2017-12-10 20:00 A | 2017-12-10 20:00 A |  | 0% → 100% |  |  |
| 118 | 管理员用例改进 | 2017-12-16 18:00 A | 2017-12-16 19:00 A |  | 0% → 100% |  |  |
| 119 | 教师、学生用例改进 | 2017-12-16 18:00 A | 2017-12-16 19:00 A |  | 0% → 100% |  |  |
| 120 | 数据字典、er图改进 | 2017-12-16 18:00 A | 2017-12-16 19:00 A |  | 0% → 100% |  |  |
| 121 | 教师、学生、游客用户界面改进 | 2017-12-17 20:00 A | 2017-12-17 21:00 A |  | 0% → 100% |  |  |
| 122 | 管理员用户界面改进 | 2017-12-17 20:00 A | 2017-12-17 21:00 A |  | 0% → 100% |  |  |
| 126 | SRS内部评审 |  |  |  |  | none → 123 |  |
| 131 | **需求管理** | 2017-12-11 20:00 A → 2017-12-26 20:00 A (+15d) | 2018-01-07 21:00 → 2018-01-08 21:00 A (+1d) | 37h → 15h | 44% → 100% |  |  |
| 133 | 建立变更控制流程 | 2017-12-12 20:00 → 2017-12-28 20:00 A (+16d) | 2017-12-14 21:00 → 2017-12-28 21:00 A (+14d) | 3h → 1h | 0% → 100% | none → 132 |  |
| 134 | 建立基线、管理需求版本 | 2017-12-18 20:00 A → 2017-12-28 20:00 A (+10d) | 2017-12-20 21:00 A → 2017-12-28 21:00 A (+8d) | 3h → 1h |  | 133FS+7h → 132 |  |
| 136 | 跟踪需求状态 | 2017-12-17 20:00 A → 2017-12-29 20:00 A (+12d) | 2017-12-21 21:00 A → 2018-01-05 21:00 A (+15d) |  |  |  |  |
| 137 | 跟踪需求问题 | 2017-12-19 20:00 → 2017-12-29 20:00 A (+10d) | 2017-12-20 21:00 → 2018-01-02 21:00 A (+13d) |  | 0% → 100% |  |  |
| 138 | 维护需求可跟踪矩阵 | 2017-12-19 20:00 → 2017-12-29 20:00 A (+10d) | 2017-12-20 21:00 → 2018-01-02 21:00 A (+13d) |  | 0% → 100% |  |  |
| 139 | 维护变更历史 | 2017-12-20 20:00 → 2017-12-29 20:00 A (+9d) | 2017-12-20 21:00 → 2017-12-29 21:00 A (+9d) |  | 0% → 100% |  |  |
| 140 | 使用需求管理工具 | 2017-12-23 20:00 → 2017-12-30 20:00 A (+7d) | 2017-12-24 21:00 → 2018-01-04 21:00 A (+11d) |  | 0% → 100% |  |  |
| 141 | 分析变更影响 | 2017-12-13 20:00 → 2018-01-04 20:00 A (+22d) | 2017-12-14 21:00 → 2018-01-05 21:00 A (+22d) |  | 0% → 100% |  |  |
| 143 | 根据评审内容修改dm图和SRS | 2017-12-23 20:00 → 2018-01-07 20:00 A (+15d) | 2017-12-23 21:00 → 2018-01-08 21:00 A (+16d) | 1d → 2h | 0% → 100% |  | was named 根据评审内容修改数据字典; resources 张旗 → 张旗; 曾雨晴 |
| 144 | 根据评审内容修改管理员用例和测试用例 | 2017-12-23 20:00 → 2018-01-07 20:00 A (+15d) | 2017-12-23 21:00 → 2018-01-08 21:00 A (+16d) | 1d → 2h | 0% → 100% |  | was named 根据评审内容修改管理员相关内容 |
| 145 | 根据评审内容修改教师、学生相关用例和测试用例 | 2017-12-23 20:00 → 2018-01-07 20:00 A (+15d) | 2017-12-23 21:00 → 2018-01-08 21:00 A (+16d) | 1d → 2h | 0% → 100% |  | was named 根据评审内容修改教师、学生相关内容 |
| 146 | 根据评审内容修改主界面 | 2017-12-23 20:00 → 2018-01-07 20:00 A (+15d) | 2017-12-23 21:00 → 2018-01-07 21:00 A (+15d) |  | 0% → 100% |  |  |
| 147 | 修改各自负责文档 | 2017-12-30 20:00 A → 2018-01-07 20:00 A (+8d) | 2017-12-30 21:00 A → 2018-01-07 21:00 A (+8d) |  |  |  |  |
| 148 | 软件需求变更文档 | 2018-01-05 20:00 → 2018-01-07 20:00 A (+2d) | 2018-01-05 20:00 → 2018-01-07 20:00 A (+2d) |  | 0% → 100% | SRS正式版第一版 → 142 | resources 曾雨晴 → 奕吉; 于欣汝 |
| 149 | **概要设计** | 2017-12-25 20:00 → 2018-01-05 20:00 A (+11d) | 2018-01-10 21:00 → 2018-01-07 21:00 A (-3d) | 18d → 7d | 0% → 100% | 34 → 128 | resources none → 曾雨晴 |
| 150 | 方案选择 | 2018-01-02 20:00 → 2018-01-05 20:00 A (+3d) | 2018-01-02 21:00 → 2018-01-05 21:00 A (+3d) |  | 0% → 100% |  |  |

| ID | Task | Start | Finish | Duration | Complete | Predecessors | Other |
| --- | --- | --- | --- | --- | --- | --- | --- |
| 151 | 功能分解（IPO图）绘制 | 2018-01-02 20:00 → 2018-01-05 20:00 A (+3d) | 2018-01-02 21:00 → 2018-01-05 21:00 A (+3d) |  | 0% → 100% |  |  |
| 152 | 小组第十四周第一次会议 | 2018-01-05 20:00 A | 2018-01-05 21:00 A |  | 0% → 100% |  |  |
| 153 | 软件结构设计 | 2018-01-03 20:00 → 2018-01-06 20:00 A (+3d) | 2018-01-03 21:00 → 2018-01-06 21:00 A (+3d) |  | 0% → 100% |  | resources 于欣汝 → 张旗 |
| 154 | 数据库设计 | 2018-01-02 20:00 → 2018-01-06 20:00 A (+4d) | 2018-01-03 21:00 → 2018-01-07 19:00 A (+4d) |  | 0% → 100% |  |  |
| 155 | 系统设计与实现计划 | 2018-01-06 20:00 → 2018-01-05 20:00 A (-1d) | 2018-01-06 20:00 → 2018-01-05 20:00 A (-1d) |  | 0% → 100% |  | resources 于欣汝 → 曾雨晴 |
| 156 | 软件概要设计说明 | 2018-01-07 20:00 A | 2018-01-07 20:00 A |  | 0% → 100% | 软件概要设计说明--修改 → 155 | resources 靳泽旭 → 曾雨晴 |
| 157 | 编码实现 | 2018-01-11 20:00 → 2018-01-08 20:00 A (-3d) | 2018-01-11 21:00 → 2018-01-08 21:00 A (-3d) |  | 0% → 100% | 149 → 156 | resources none → 靳泽旭; 张旗 |
| 158 | **系统测试** |  | 2018-01-13 21:00 A |  | 0% → 100% |  | resources none → 于欣汝 |
| 159 | 测试计划 | 2018-01-06 20:00 A | 2018-01-06 20:00 A |  | 0% → 100% |  | resources 张旗 → 于欣汝 |
| 160 | **安装部署计划** |  |  |  | 0% → 100% |  |  |
| 161 | 安装部署计划报告 | 2018-01-06 20:00 A | 2018-01-06 20:00 A |  | 0% → 100% |  |  |
| 162 | **系统维护** |  | 2018-01-15 21:00 A |  | 0% → 100% |  | resources none → 靳泽旭 |
| 163 | 系统维护报告 | 2018-01-06 20:00 A | 2018-01-06 20:00 A |  | 0% → 100% |  |  |
| 164 | **项目总结** |  | 2018-01-15 21:00 → 2018-01-17 21:00 (+2d) | 9d → 11d | 0% → 33% | 149 → 163 |  |
| 166 | 项目分析 | 2018-01-11 20:00 → 2018-01-14 20:00 (+3d) | 2018-01-11 21:00 → 2018-01-14 21:00 (+3d) |  |  | 149 → 148 |  |
| 167 | 总结ppt | 2018-01-12 20:00 → 2018-01-15 20:00 (+3d) | 2018-01-12 21:00 → 2018-01-15 21:00 (+3d) |  |  |  |  |
| 168 | 项目总结报告 | 2018-01-13 18:00 → 2018-01-17 20:00 (+4d) | 2018-01-13 18:00 → 2018-01-17 20:00 (+4d) |  |  |  |  |
