# PRD2017G09-软件工程系列课程教学辅助网站-需求工程计划甘特图V1.1-曾雨晴

How a schedule from MS Project changed from version to version. A marks actual dates.

## Version 1 (data date 2017-10-28, saved 2017-11-03, file PRD2017G09-软件工程系列课程教学辅助网站-需求工程计划甘特图V1.1-曾雨晴.mpp)

Note of the change: Merge branch '可控文件' of github.com:moritashin/PRD2017-09 into 可控文件

| ID | WBS | Task | Duration | Start | Finish | Predecessors | Complete |
| --- | --- | --- | --- | --- | --- | --- | --- |
| 1 | 1 | **软件工程系列课程教学辅助网站** | 154d | 2017-09-28 20:00 A | 2018-01-16 21:00 |  | 22% |
| 2 | 1.1 | **项目前期准备** | 6h | 2017-09-28 20:00 A | 2017-10-04 21:00 |  | 100% |
| 3 | 1.1.1 | **项目范围选定** | 1h | 2017-09-28 20:00 A | 2017-09-28 21:00 A |  | 100% |
| 4 |  | 类似项目案例分析 | 1h | 2017-09-28 20:00 A | 2017-09-28 21:00 A |  | 100% |
| 5 |  | 小组第一周会议（讨论项目选题和后期分配资源） | 1h | 2017-09-28 20:00 A | 2017-09-28 21:00 A | 4 | 100% |
| 6 |  | 获取项目开发硬件资源 | 5h | 2017-09-29 20:00 A | 2017-10-03 21:00 A | 3 | 100% |
| 7 |  | logo设计 | 4h | 2017-09-29 20:00 A | 2017-09-30 21:00 A | 3 | 100% |
| 8 |  | 项目选定和开发软硬件的获得 | 0d | 2017-10-03 20:00 A | 2017-10-03 20:00 A | 6 | 100% |
| 9 |  | 小组第二周第一次会议记录 | 1h | 2017-10-09 17:00 A | 2017-10-09 18:00 A |  | 100% |
| 10 |  | 小组第二周第二次会议记录 | 1h | 2017-10-13 20:00 A | 2017-10-13 21:00 A |  | 100% |
| 11 | 1.4 | **项目计划** | 32d | 2017-10-10 20:00 | 2017-10-29 21:00 | 8 | 97% |
| 12 |  | 甘特图绘制V0.1 | 4h | 2017-10-09 20:00 A | 2017-10-12 21:00 A | 2 | 100% |
| 13 |  | WBS绘制 | 2h | 2017-10-13 20:00 A | 2017-10-14 19:00 A | 12 | 100% |
| 14 |  | OBS绘制 | 2h | 2017-10-14 19:00 A | 2017-10-14 21:00 A | 13 | 100% |
| 15 |  | 风险管理 | 2h | 2017-10-13 20:00 A | 2017-10-14 19:00 A | 12 | 100% |
| 16 |  | 版本控制系统配置 | 3h | 2017-10-11 20:00 A | 2017-10-13 21:00 A | 12 | 100% |
| 17 |  | 项目计划V0.1 | 0d | 2017-10-15 20:00 A | 2017-10-15 20:00 A | 2 | 100% |
| 18 |  | 甘特图完善V0.2 | 3h | 2017-10-17 20:00 A | 2017-10-19 21:00 A | 17 | 100% |
| 19 |  | 项目计划完善V0.2 | 0h | 2017-10-20 20:00 A | 2017-10-20 20:00 A | 18 | 100% |
| 20 |  | 小组第三周第一次会议 | 1d | 2017-10-20 12:00 A | 2017-10-20 13:00 A |  | 100% |
| 21 |  | 小组第三周第二次会议 | 1d | 2017-10-20 20:00 A | 2017-10-20 21:00 A |  | 100% |
| 22 |  | 小组第四周第一次会议 | 1d | 2017-10-23 17:00 A | 2017-10-23 18:00 A |  | 100% |
| 23 |  | 质量保证计划 | 1h | 2017-10-23 20:00 A | 2017-10-23 21:00 A | 19 | 100% |
| 24 |  | 人力资源配置 | 1h | 2017-10-23 20:00 A | 2017-10-23 21:00 A | 19 | 100% |
| 25 |  | 成本预算 | 1h | 2017-10-26 20:00 A | 2017-10-26 21:00 A | 23 | 100% |
| 26 |  | 甘特图完善V1.0 | 3h | 2017-10-27 20:00 A | 2017-10-28 20:00 A | 25 | 100% |
| 27 |  | WBS、OBS修改 | 4h | 2017-10-28 20:00 A | 2017-10-29 21:00 | 26 | 75% |
| 28 |  | 项目计划完善V1.0 | 0h | 2017-10-28 20:00 A | 2017-10-28 20:00 A | 26 | 100% |
| 29 |  | 小组第四周第二次会议 | 1h | 2017-10-27 19:30 A | 2017-10-27 20:30 A |  | 100% |
| 30 |  | 项目章程 | 0h | 2017-10-27 20:00 A | 2017-10-27 20:00 A | 28 | 100% |
| 31 |  | 项目启动 | 0d | 2017-10-27 20:00 | 2017-10-27 20:00 | 30 |  |
| 32 |  | 需求工程计划-初步 | 0h | 2017-10-26 20:00 A | 2017-10-26 20:00 A | 31 | 100% |
| 33 |  | QA计划初步 | 0h | 2017-10-28 20:00 A | 2017-10-28 20:00 A | 23 | 100% |
| 34 | 1.7 | **需求工程** | 90d | 2017-10-29 20:00 | 2017-12-25 21:00 | 32 | 1% |
| 35 |  | 小组第五周第一次会议 | 1h | 2017-10-30 17:00 A | 2017-10-30 18:00 A |  | 100% |
| 36 | 1.7.2 | **需求获取活动** | 17d | 2017-10-29 20:00 | 2017-11-10 21:00 |  |  |
| 37 | 1.7.2.1 | **建立业务需求** | 8h | 2017-10-30 20:00 | 2017-11-04 21:00 |  |  |
| 38 | 1.7.2.1.1 | **定义产品愿景和项目范围** | 5h | 2017-10-30 20:00 | 2017-11-03 21:00 |  |  |
| 39 |  | 建立业务目标模型 | 1h | 2017-10-30 20:00 | 2017-10-30 21:00 | 35 |  |
| 40 |  | 干系人评审模型 | 1h | 2017-11-02 20:00 | 2017-11-02 21:00 | 39 |  |
| 41 |  | 解决业务需求冲突 | 1h | 2017-11-04 20:00 | 2017-11-04 21:00 | 40 |  |
| 42 | 1.7.2.2 | **识别用户群** | 2h | 2017-10-31 20:00 | 2017-11-01 21:00 |  |  |
| 43 |  | 选择产品代言人，记录产品代言人的期望 | 1h | 2017-10-28 20:00 | 2017-10-28 21:00 | 33 |  |
| 44 |  | 用户分类 | 1h | 2017-10-31 20:00 | 2017-10-31 21:00 | 39 |  |
| 45 |  | 识别用户类别 | 1h | 2017-11-01 20:00 | 2017-11-01 21:00 | 44 |  |
| 46 |  | 举行引导式需求获取讨论会 | 1d | 2017-11-02 20:00 | 2017-11-02 21:00 | 45 |  |
| 47 |  | QA计划 | 0h | 2017-11-02 20:00 | 2017-11-02 20:00 | 45 |  |
| 48 |  | 小组第五周第二次会议 | 0h | 2017-11-03 20:00 | 2017-11-03 21:00 | 46 |  |
| 49 |  | 组织焦点小组 | 1h | 2017-11-04 18:00 | 2017-11-04 19:00 | 48 |  |
| 50 |  | 识别用户需求 | 1d | 2017-11-04 18:00 | 2017-11-04 19:00 | 48 |  |
| 51 |  | 识别系统事件和响应 | 3h | 2017-11-04 18:00 | 2017-11-04 21:00 | 48 |  |
| 52 |  | 观察用户如何完成工作 | 4d | 2017-11-04 18:00 | 2017-11-05 19:00 | 48 |  |
| 53 |  | 分发问卷调查 | 1d | 2017-11-04 18:00 | 2017-11-04 19:00 | 48 |  |
| 54 |  | 举办需求获取访谈 | 3h | 2017-11-05 18:00 | 2017-11-05 21:00 | 51 |  |
| 55 |  | 分析文档 | 1d | 2017-11-05 18:00 | 2017-11-05 19:00 | 53 |  |
| 56 |  | 检查问题报告 | 1h | 2017-11-07 20:00 | 2017-11-07 21:00 |  |  |
| 57 |  | 重用已有的需求 | 2d | 2017-11-07 20:00 | 2017-11-08 21:00 |  |  |
| 58 |  | 学生用户代表访谈 | 2h | 2017-11-08 20:00 | 2017-11-09 21:00 |  |  |
| 59 |  | 游客用户代表访谈 | 1h | 2017-11-08 20:00 | 2017-11-08 21:00 |  |  |
| 60 |  | 教师用户代表访谈 | 1h | 2017-11-09 20:00 | 2017-11-09 21:00 |  |  |
| 61 |  | 管理员用户代表访谈 | 1h | 2017-11-08 20:00 | 2017-11-08 21:00 |  |  |
| 62 | 1.7.3 | **需求分析** | 29d | 2017-10-31 20:00 | 2017-11-18 21:00 | 36 |  |
| 63 |  | 应用环境建模（生态环境图） | 4d | 2017-10-31 20:00 | 2017-11-03 21:00 |  |  |
| 64 |  | 创建原形 | 5h | 2017-11-04 18:00 | 2017-11-05 20:00 | 48 |  |
| 65 |  | 分析可实现性 | 1d | 2017-11-05 20:00 | 2017-11-05 21:00 | 64 |  |
| 66 |  | 小组第六周第一次会议 | 1h | 2017-11-06 17:00 | 2017-11-06 18:00 |  |  |
| 67 |  | 需求工程计划-修改 | 1h | 2017-11-09 20:00 | 2017-11-09 21:00 | 61 |  |
| 68 |  | 小组第六周第二次会议 | 1h | 2017-11-10 20:00 | 2017-11-10 21:00 |  |  |
| 69 |  | 排列需求优先级 | 1d | 2017-11-11 20:00 | 2017-11-11 21:00 |  |  |
| 70 |  | 创建数据字典和ER图 | 4h | 2017-11-14 20:00 | 2017-11-17 21:00 |  |  |

| ID | WBS | Task | Duration | Start | Finish | Predecessors |
| --- | --- | --- | --- | --- | --- | --- |
| 71 |  | 小组第七周第一次会议 | 1h | 2017-11-13 17:00 | 2017-11-13 18:00 |  |
| 72 |  | 需求工程计划 | 0d | 2017-11-18 18:00 | 2017-11-18 18:00 | 67 |
| 73 | 1.7.3.11 | **需求建模** | 9d | 2017-11-11 20:00 | 2017-11-17 21:00 |  |
| 74 |  | 数据流图绘制 | 1h | 2017-11-12 20:00 | 2017-11-12 21:00 |  |
| 75 |  | 转态转移图 | 3h | 2017-11-11 20:00 | 2017-11-12 20:00 |  |
| 76 |  | 决策树 | 1h | 2017-11-12 20:00 | 2017-11-12 21:00 |  |
| 77 |  | 分析接口 | 1d | 2017-11-11 20:00 | 2017-11-11 21:00 |  |
| 78 |  | 将需求分配到子系统 | 2h | 2017-11-14 20:00 | 2017-11-15 21:00 |  |
| 79 | 1.7.4 | **规范说明** | 21h | 2017-11-16 20:00 | 2017-11-28 21:00 | 62 |
| 80 |  | 小组第七周第二次会议 | 1h | 2017-11-18 20:00 | 2017-11-18 21:00 |  |
| 81 |  | 采用需求文档模板 | 1d | 2017-11-18 20:00 | 2017-11-18 21:00 |  |
| 82 |  | 识别需求源头 | 1h | 2017-11-19 18:00 | 2017-11-19 19:00 | 81 |
| 83 |  | 为每个需求分配唯一标示 | 1h | 2017-11-19 19:00 | 2017-11-19 20:00 | 82 |
| 84 |  | 记录业务规则 | 1h | 2017-11-16 20:00 | 2017-11-16 21:00 |  |
| 85 |  | 描述非功能性需求 | 1h | 2017-11-19 20:00 | 2017-11-27 21:00 |  |
| 86 |  | 小组第八周第一次会议 | 1h | 2017-11-20 17:00 | 2017-11-20 18:00 |  |
| 87 |  | 小组第八周第二次会议 | 1h | 2017-11-24 20:00 | 2017-11-24 21:00 |  |
| 88 |  | 需求规格说明书--初步 | 0d | 2017-11-28 20:00 | 2017-11-28 20:00 | 85 |
| 89 | 1.7.5 | **需求验证** | 16d | 2017-11-27 20:00 | 2017-12-08 21:00 | 62 |
| 90 |  | 小组第九周第一次会议 | 1h | 2017-11-27 17:00 | 2017-11-27 18:00 |  |
| 91 |  | 评审需求 | 10h | 2017-11-28 20:00 | 2017-12-03 21:00 | 36 |
| 92 |  | 测试需求 | 10h | 2017-11-29 20:00 | 2017-12-04 21:00 | 36 |
| 93 |  | 定义验收条件 | 5h | 2017-11-30 20:00 | 2017-12-02 21:00 |  |
| 94 |  | 小组第九周第二次会议 | 0h | 2017-12-01 20:00 | 2017-12-01 21:00 |  |
| 95 |  | 模拟需求 | 7h | 2017-12-02 18:00 | 2017-12-04 21:00 | 93 |
| 96 |  | 小组第十周第一次会议 | 1h | 2017-12-04 17:00 | 2017-12-04 18:00 |  |
| 97 |  | 软件需求规格说书 | 0d | 2017-11-28 20:00 | 2017-11-28 20:00 | 88 |
| 98 |  | 小组第十周第二次会议 | 1h | 2017-12-08 20:00 | 2017-12-08 21:00 |  |
| 99 | 1.7.6 | **需求管理** | 28h | 2017-12-11 20:00 | 2017-12-30 21:00 | 89 |
| 100 |  | 小组第十一周第一次会议 | 1h | 2017-12-11 17:00 | 2017-12-11 18:00 |  |
| 101 |  | 建立变更控制流程 | 3h | 2017-12-12 20:00 | 2017-12-14 21:00 |  |
| 102 |  | 建立基线、管理需求版本 | 3h | 2017-12-18 20:00 | 2017-12-20 21:00 | 101FS+7h |
| 103 |  | 分析变更影响 | 3h | 2017-12-12 20:00 | 2017-12-14 21:00 |  |
| 104 |  | 小组第十一周第二次会议 | 1h | 2017-12-15 20:00 | 2017-12-15 21:00 |  |
| 105 |  | 维护变更历史 | 4h | 2017-12-18 20:00 | 2017-12-21 21:00 |  |
| 106 |  | 小组第十二周第一次会议 | 1h | 2017-12-17 17:00 | 2017-12-17 18:00 |  |
| 107 |  | 跟踪需求状态 | 5h | 2017-12-17 20:00 | 2017-12-21 21:00 |  |
| 108 |  | 跟踪需求问题 | 4h | 2017-12-18 20:00 | 2017-12-21 21:00 |  |
| 109 |  | 维护需求可跟踪矩阵 | 2h | 2017-12-19 20:00 | 2017-12-20 21:00 |  |
| 110 |  | 小组第十二周第二次会议 | 1h | 2017-12-22 20:00 | 2017-12-22 21:00 |  |
| 111 |  | 使用需求管理工具 | 4h | 2017-12-23 20:00 | 2017-12-24 21:00 |  |
| 112 |  | 软件需求变更文档 | 0d | 2017-12-25 20:00 | 2017-12-25 20:00 | 111 |
| 113 |  | 小组第十三周第一次会议 | 1h | 2017-12-25 17:00 | 2017-12-25 18:00 |  |
| 114 |  | 软件需求变更文档修改 | 1h | 2017-12-27 20:00 | 2017-12-27 21:00 | 97FS+45h |
| 115 | 1.8 | **概要设计** | 18d | 2017-12-25 20:00 | 2018-01-10 21:00 | 32 |
| 116 |  | 方案选择 | 1h | 2017-12-26 20:00 | 2017-12-26 21:00 |  |
| 117 |  | 功能分解（IPO图）绘制 | 3h | 2017-12-26 20:00 | 2017-12-28 21:00 |  |
| 118 |  | 软件结构设计 | 3h | 2018-01-02 20:00 | 2018-01-04 21:00 |  |
| 119 |  | 小组第十三周第二次会议 | 1h | 2017-12-29 20:00 | 2017-12-29 21:00 |  |
| 120 |  | 数据库设计 | 2h | 2018-01-02 20:00 | 2018-01-03 21:00 |  |
| 121 |  | 小组第十四周第一次会议 | 1h | 2018-01-05 20:00 | 2018-01-05 21:00 |  |
| 122 |  | 系统设计与实现计划 | 0h | 2018-01-07 20:00 | 2018-01-07 20:00 | 114FS+11h |
| 123 |  | 软件概要设计说明--初步 | 0h | 2018-01-08 20:00 | 2018-01-08 20:00 | 119FS+8h |
| 124 |  | 软件概要设计说明--修改 | 5h | 2018-01-08 18:00 | 2018-01-10 21:00 |  |
| 125 |  | 软件概要设计说明 | 0d | 2018-01-08 20:00 | 2018-01-08 20:00 |  |
| 126 | 1.9 | **项目总结** | 8d | 2018-01-11 20:00 | 2018-01-14 21:00 | 115 |
| 127 |  | 项目分析 | 1d | 2018-01-11 20:00 | 2018-01-11 21:00 | 115 |
| 128 |  | 总结ppt | 1d | 2018-01-12 20:00 | 2018-01-12 21:00 | 127 |
| 129 |  | 项目总结报告 | 0h | 2018-01-14 20:00 | 2018-01-14 20:00 |  |

## Version 2 (data date 2017-10-28, saved 2017-11-04, file PRD2017G09-软件工程系列课程教学辅助网站-需求工程计划甘特图V1.2-曾雨晴.mpp)

Note of the change: Merge branch '可控文件' of github.com:moritashin/PRD2017-09 into 可控文件

Last finish stays 2018-01-16. Complete tasks 28 → 42.

Added:

| ID | Task | Duration | Start | Finish | Resources |
| --- | --- | --- | --- | --- | --- |
| 49 | 相关文档修改 | 1d | 2017-11-05 20:00 | 2017-11-05 21:00 | 曾雨晴; 靳泽旭; 奕吉; 于欣汝; 张旗 |

Changed:

| ID | Task | Start | Finish | Complete |
| --- | --- | --- | --- | --- |
| 1 | **软件工程系列课程教学辅助网站** |  |  | 22% → 32% |
| 34 | **需求工程** |  |  | 1% → 15% |
| 36 | **需求获取活动** |  |  | 0% → 65% |
| 37 | **建立业务需求** | 2017-10-30 20:00 A |  | 0% → 33% |
| 41 | 解决业务需求冲突 | 2017-11-04 20:00 A | 2017-11-04 21:00 A | 0% → 100% |
| 42 | **识别用户群** |  | 2017-11-01 21:00 A | 0% → 100% |
| 43 | 选择产品代言人，记录产品代言人的期望 | 2017-10-28 20:00 A | 2017-10-28 21:00 A | 0% → 100% |
| 44 | 用户分类 | 2017-10-31 20:00 A | 2017-10-31 21:00 A | 0% → 100% |
| 45 | 识别用户类别 | 2017-11-01 20:00 A | 2017-11-01 21:00 A | 0% → 100% |
| 46 | 举行引导式需求获取讨论会 | 2017-11-02 20:00 A | 2017-11-02 21:00 A | 0% → 100% |
| 47 | QA计划 | 2017-11-02 20:00 A | 2017-11-02 20:00 A | 0% → 100% |
| 48 | 小组第五周第二次会议 | 2017-11-03 20:00 A | 2017-11-03 21:00 A | 0% → 100% |
| 50 | 组织焦点小组 | 2017-11-04 18:00 A | 2017-11-04 19:00 A | 0% → 100% |
| 51 | 识别用户需求 | 2017-11-04 18:00 A | 2017-11-04 19:00 A | 0% → 100% |
| 52 | 识别系统事件和响应 | 2017-11-04 18:00 A | 2017-11-04 21:00 A | 0% → 100% |
| 53 | 观察用户如何完成工作 | 2017-11-04 18:00 A | 2017-11-05 19:00 A | 0% → 100% |
| 54 | 分发问卷调查 | 2017-11-04 18:00 A | 2017-11-04 19:00 A | 0% → 100% |
| 55 | 举办需求获取访谈 | 2017-11-05 18:00 A | 2017-11-05 21:00 A | 0% → 100% |
| 56 | 分析文档 | 2017-11-05 18:00 A | 2017-11-05 19:00 A | 0% → 100% |

## Version 3 (data date 2017-10-28, saved 2017-11-18, file PRD2017G09-软件工程系列课程教学辅助网站-需求工程项目计划甘特图V1.4-曾雨晴.mpp)

Note of the change: 提交两个项目计划甘特图V1.4版本

Last finish stays 2018-01-16. Complete tasks 42 → 46.

Added:

| ID | Task | Duration | Start | Finish | Predecessors | Resources |
| --- | --- | --- | --- | --- | --- | --- |
| 41 | 项目愿景与范围文档 | 0d | 2017-10-28 20:00 | 2017-10-28 20:00 | 33 | 曾雨晴; 奕吉 |
| 72 | 相关文档修改、绘制uml图 | 1d | 2017-11-12 20:00 | 2017-11-12 21:00 |  | 曾雨晴; 靳泽旭; 奕吉; 于欣汝; 张旗 |

Changed:

| ID | Task | Start | Finish | Duration | Complete | Predecessors | Other |
| --- | --- | --- | --- | --- | --- | --- | --- |
| 1 | **软件工程系列课程教学辅助网站** |  |  |  | 32% → 35% |  |  |
| 34 | **需求工程** |  |  |  | 15% → 20% |  |  |
| 36 | **需求获取活动** |  | 2017-11-10 21:00 → 2017-11-27 21:00 (+17d) | 17d → 46d | 65% → 68% |  |  |
| 37 | **建立业务需求** | 2017-10-30 20:00 A → 2017-10-30 20:00 |  |  |  |  |  |
| 43 | **识别用户群** |  |  |  |  | none → 41 |  |
| 59 | 重用已有的需求 |  |  |  |  |  | resources 靳泽旭 → 张旗 |
| 60 | 学生用户代表访谈 | 2017-11-08 20:00 → 2017-11-18 20:00 (+10d) | 2017-11-09 21:00 → 2017-11-19 19:00 (+10d) |  |  |  | resources 于欣汝 → 靳泽旭 |
| 61 | 游客用户代表访谈 | 2017-11-08 20:00 → 2017-11-18 20:00 (+10d) | 2017-11-08 21:00 → 2017-11-18 21:00 (+10d) |  |  |  | resources 张旗 → 靳泽旭 |
| 62 | 教师用户代表访谈 | 2017-11-09 20:00 → 2017-11-27 20:00 A (+18d) | 2017-11-09 21:00 → 2017-11-27 21:00 A (+18d) |  | 0% → 100% |  | resources 曾雨晴 → 奕吉 |
| 63 | 管理员用户代表访谈 |  |  |  |  |  | resources 奕吉 → 曾雨晴 |
| 64 | **需求分析** | 2017-10-31 20:00 A |  |  | 0% → 21% |  |  |
| 65 | 应用环境建模（生态环境图） | 2017-10-31 20:00 A | 2017-11-03 21:00 A |  | 0% → 100% |  |  |
| 68 | 小组第六周第一次会议 | 2017-11-06 17:00 A | 2017-11-06 18:00 A |  | 0% → 100% |  |  |
| 70 | 小组第六周第二次会议 | 2017-11-10 20:00 A | 2017-11-10 21:00 A |  | 0% → 100% |  |  |
| 129 | **项目总结** |  | 2018-01-14 21:00 → 2018-01-15 21:00 (+1d) | 8d → 9d |  |  |  |
